# GestiónProyecto_Llamathrust_Optimizado

Schedule from MS Project, 2019-02-04 to 2020-09-03, status date 2019-05-11, costs in €, A marks actual dates.

## Calendars

- Estándar: Mon-Fri 09:00-13:00, 15:00-19:00; Sat-Sun off. Exceptions (off unless hours are given): 2019-04-18 (Jueves Santo, recurring), 2019-04-19 (Viernes Santo, recurring), 2019-05-01 (Fiesta del Trabajo, recurring), 2019-05-02 (Fiesta de la Comunidad de Madrid, recurring), 2019-08-06 (Santos Justo y Pastor, recurring), 2019-08-15 (Asunción de la Virgen, recurring), 2019-10-09 (Bautismo de Miguel de Cervantes, recurring), 2019-10-12 (Día de la Hispanidad, recurring), 2019-11-01 (Todos los Santos, recurring), 2019-12-06 (Día de la Constitución, recurring), 2019-12-09 (Inmaculada Concepción, recurring), 2019-12-25 (Navidad, recurring), 2019-12-31 (Víspera de Año Nuevo, recurring), 2020-01-01 (Año Nuevo, recurring), 2020-03-17 (San Patricio, recurring).

## Resources

| Resource | Rate | Cost per use |
| --- | --- | --- |
| Scrum Master | 15 |  |
| Analista | 13 |  |
| Programador | 14 |  |
| Técnico | 13 |  |
| Ordenadores | 5200 |  |
| Base de datos Azure |  | 4500 |
| Hardware de desarrollo | 20000 |  |
| Servicio de Internet |  | 80 |

## Schedule

| ID | WBS | Task | Duration | Start | Finish | Predecessors | Complete | Remaining | Baseline start | Baseline finish | Baseline duration | Baseline 1 start | Baseline 1 finish | Total slack | Free slack | Constraint | Resources | Work | Actual work | Cost | Baseline cost | Actual cost | Text1 |
| --- | --- | --- | --- | --- | --- | --- | --- | --- | --- | --- | --- | --- | --- | --- | --- | --- | --- | --- | --- | --- | --- | --- | --- |
| 1 | 1 | **Llamathrust** | 399.38d | 2019-02-04 A | 2020-09-03 |  | 18% | 325.84d | 2019-02-04 | 2020-09-02 | 399d | 2019-02-04 | 2020-09-03 | 0d |  |  |  | 10423h | 2016h | 260,403.4 | 142,080 | 27,905.4 |  |
| 2 | 1.1 | **Dispositivos Enchufe** | 399.38d | 2019-02-04 A | 2020-09-03 |  | 22% | 313.1d | 2019-02-04 | 2020-09-02 | 399d | 2019-02-04 | 2020-09-03 | 0d |  |  |  | 5560h | 1248h | 76,840 | 76,840 | 17,368 | Tarea |
| 3 | 1.1.1 | **Tomar datos de los sensores** | 75d | 2019-02-04 A | 2019-05-23 |  | 88% | 9.12d | 2019-02-04 | 2019-05-23 | 75d | 2019-02-04 | 2019-05-23 | 0d |  |  |  | 1536h | 1248h | 21,328 | 21,328 | 17,368 | Estado Inicial |
| 4 | 1.1.1.1 | Planificación | 7d | 2019-02-04 A | 2019-02-12 A |  | 100% |  | 2019-02-04 | 2019-02-12 | 7d | 2019-02-04 | 2019-02-12 |  |  |  | Scrum Master; Técnico | 112h | 112h | 1,568 | 1,568 | 1,568 |  |
| 5 | 1.1.1.2 | Diseño del producto | 18d | 2019-02-13 A | 2019-03-08 A | 4 | 100% |  | 2019-02-13 | 2019-03-08 | 18d | 2019-02-13 | 2019-03-08 |  |  |  | Scrum Master; Técnico | 288h | 288h | 4,032 | 4,032 | 4,032 |  |
| 6 | 1.1.1.3 | Programación | 38d | 2019-03-11 A | 2019-05-08 A | 5 | 100% |  | 2019-03-11 | 2019-05-08 | 38d | 2019-03-11 | 2019-05-08 |  |  |  | Scrum Master; Técnico; Analista; Programador | 784h | 784h | 10,888 | 10,888 | 10,888 |  |
| 7 | 1.1.1.4 | Integración y prueba | 11d | 2019-05-09 A | 2019-05-23 | 6 | 18% | 9d | 2019-05-09 | 2019-05-23 | 11d | 2019-05-09 | 2019-05-23 | -318.38d | 0d |  | Scrum Master; Técnico; Analista; Programador | 352h | 64h | 4,840 | 4,840 | 880 |  |
| 8 | 1.1.2 | **Conectar los enchufes con la puerta de enlace** | 113.75d | 2019-05-24 | 2019-11-05 | 3, 40 |  |  | 2019-05-24 | 2019-11-04 | 113d | 2019-05-24 | 2019-11-05 | -318.38d | 0d |  |  | 1856h |  | 26,076 | 26,076 |  |  |
| 9 | 1.1.2.1 | Planificación | 8d | 2019-05-24 | 2019-06-04 |  |  |  | 2019-05-24 | 2019-06-04 | 8d | 2019-05-24 | 2019-06-04 | -318.38d | 0d |  | Scrum Master | 64h |  | 960 | 960 |  |  |
| 10 | 1.1.2.2 | Diseño del producto | 21d | 2019-06-05 | 2019-07-04 | 9 |  |  | 2019-06-05 | 2019-07-03 | 21d | 2019-06-05 | 2019-07-04 | -318.38d | 0d |  | Scrum Master | 168h |  | 2,520 | 2,520 |  |  |
| 11 | 1.1.2.3 | Programación | 71d | 2019-07-04 | 2019-10-16 | 10 |  |  | 2019-07-04 | 2019-10-15 | 71d | 2019-07-04 | 2019-10-16 | -318.38d | 0d | start no earlier than 2019-07-04 | Scrum Master; Técnico; Analista [25%]; Programador [25%] | 1208h |  | 16,876 | 16,876 |  |  |
| 12 | 1.1.2.4 | Integración y prueba | 13d | 2019-10-16 | 2019-11-05 | 11 |  |  | 2019-10-16 | 2019-11-04 | 13d | 2019-10-16 | 2019-11-05 | -318.38d | 0d |  | Scrum Master; Técnico; Analista; Programador | 416h |  | 5,720 | 5,720 |  |  |
| 13 | 1.1.3 | **Gestión de tareas que tomarán los datos periódicamente** | 115d | 2020-03-26 | 2020-09-03 | 24 |  |  | 2020-03-26 | 2020-09-02 | 115d | 2020-03-26 | 2020-09-03 | 0d |  |  |  | 2168h |  | 29,436 | 29,436 |  |  |
| 14 | 1.1.3.1 | Planificación | 8d | 2020-03-26 | 2020-04-07 |  |  |  | 2020-03-26 | 2020-04-06 | 8d | 2020-03-26 | 2020-04-07 | 0.5d | 0d |  | Analista; Programador | 128h |  | 1,728 | 1,728 |  |  |
| 15 | 1.1.3.2 | Diseño del producto | 21.88d | 2020-04-07 | 2020-05-07 | 14 |  |  | 2020-04-07 | 2020-05-06 | 22d | 2020-04-07 | 2020-05-07 | 0.5d |  |  | Analista; Programador | 336h |  | 4,536 | 4,536 |  |  |
| 16 | 1.1.3.3 | Programación | 71d | 2020-05-08 | 2020-08-17 | 15 |  |  | 2020-05-08 | 2020-08-14 | 71d | 2020-05-08 | 2020-08-17 | 0d |  | start no earlier than 2020-05-08 | Analista; Programador; Scrum Master [25%]; Técnico [25%] | 1288h |  | 17,452 | 17,452 |  |  |
| 17 | 1.1.3.4 | Integración y prueba | 13d | 2020-08-17 | 2020-09-03 | 16 |  |  | 2020-08-17 | 2020-09-02 | 13d | 2020-08-17 | 2020-09-03 | 0d |  |  | Analista; Programador; Scrum Master; Técnico | 416h |  | 5,720 | 5,720 |  |  |
| 18 | 1.2 | **Dispositivos de puerta de enlace** | 132.88d | 2019-11-05 | 2020-05-18 |  |  |  | 2019-11-05 | 2020-05-15 | 133d | 2019-11-05 | 2020-05-18 | -318.38d | 0d |  |  | 1576h |  | 21,688 | 21,688 |  | Tarea |
| 19 | 1.2.1 | **Conectar la puerta de enlace con los enchufes** | 11d | 2019-11-05 | 2019-11-20 | 8 |  |  | 2019-11-05 | 2019-11-19 | 11d | 2019-11-05 | 2019-11-20 | -318.38d | 0d |  |  | 320h |  | 4,400 | 4,400 |  |  |
| 20 | 1.2.1.1 | Planificación | 1d | 2019-11-05 | 2019-11-06 |  |  |  | 2019-11-05 | 2019-11-05 | 1d | 2019-11-05 | 2019-11-06 | -318.38d | 0d |  | Scrum Master; Técnico | 16h |  | 224 | 224 |  |  |
| 21 | 1.2.1.2 | Diseño del producto | 1d | 2019-11-06 | 2019-11-07 | 20 |  |  | 2019-11-06 | 2019-11-06 | 1d | 2019-11-06 | 2019-11-07 | -318.38d | 0d |  | Scrum Master; Técnico; Programador; Analista | 32h |  | 440 | 440 |  |  |
| 22 | 1.2.1.3 | Programación | 7d | 2019-11-07 | 2019-11-18 | 21 |  |  | 2019-11-07 | 2019-11-15 | 7d | 2019-11-07 | 2019-11-18 | -318.38d | 0d |  | Scrum Master; Técnico; Analista; Programador | 224h |  | 3,080 | 3,080 |  |  |
| 23 | 1.2.1.4 | Integración y prueba | 2d | 2019-11-18 | 2019-11-20 | 22 |  |  | 2019-11-15 | 2019-11-19 | 2d | 2019-11-18 | 2019-11-20 | -318.38d | 0d |  | Scrum Master; Técnico; Analista; Programador | 48h |  | 656 | 656 |  |  |
| 24 | 1.2.2 | **Conectar la puerta de enlace con la base de datos** | 16.12d | 2020-03-03 | 2020-03-26 | 45 |  |  | 2020-03-03 | 2020-03-25 | 16d | 2020-03-03 | 2020-03-26 | 0.5d | 0d |  |  | 256h |  | 3,456 | 3,456 |  |  |
| 25 | 1.2.2.1 | Planificación | 1d | 2020-03-03 | 2020-03-04 |  |  |  | 2020-03-03 | 2020-03-03 | 1d | 2020-03-03 | 2020-03-04 | 0.5d | 0d |  | Analista; Programador | 16h |  | 216 | 216 |  |  |
| 26 | 1.2.2.2 | Diseño del producto | 2d | 2020-03-04 | 2020-03-06 | 25 |  |  | 2020-03-04 | 2020-03-05 | 2d | 2020-03-04 | 2020-03-06 | 0.5d | 0d |  | Analista; Programador | 32h |  | 432 | 432 |  |  |
| 27 | 1.2.2.3 | Programación | 10d | 2020-03-06 | 2020-03-23 | 26 |  |  | 2020-03-06 | 2020-03-20 | 10d | 2020-03-06 | 2020-03-23 | 0.5d | 0d |  | Analista; Programador | 160h |  | 2,160 | 2,160 |  |  |
| 28 | 1.2.2.4 | Integración y prueba | 3d | 2020-03-23 | 2020-03-26 | 27 |  |  | 2020-03-23 | 2020-03-25 | 3d | 2020-03-23 | 2020-03-26 | 0.5d |  |  | Analista; Programador | 48h |  | 648 | 648 |  |  |

| ID | WBS | Task | Duration | Start | Finish | Predecessors | Complete | Remaining | Baseline start | Baseline finish | Baseline duration | Baseline 1 start | Baseline 1 finish | Total slack | Free slack | Resources | Work | Actual work | Cost | Baseline cost | Actual cost | Text1 |
| --- | --- | --- | --- | --- | --- | --- | --- | --- | --- | --- | --- | --- | --- | --- | --- | --- | --- | --- | --- | --- | --- | --- |
| 29 | 1.2.3 | **Procesar las medidas recibidas de los sensores** | 40.25d | 2019-11-20 | 2020-01-22 | 19 |  |  | 2019-11-20 | 2020-01-22 | 41d | 2019-11-20 | 2020-01-22 | -336.62d | 0d |  | 488h |  | 6,664 | 6,664 |  |  |
| 30 | 1.2.3.1 | Planificación | 1d | 2019-11-20 | 2019-11-21 |  |  |  | 2019-11-20 | 2019-11-20 | 1d | 2019-11-20 | 2019-11-21 | -318.38d | 0d | Scrum Master; Técnico; Analista | 24h |  | 328 | 328 |  |  |
| 31 | 1.2.3.2 | Diseño del producto | 5d | 2019-11-21 | 2019-11-28 | 30 |  |  | 2019-11-21 | 2019-11-27 | 5d | 2019-11-21 | 2019-11-28 | -318.38d | 0d | Scrum Master; Técnico; Analista | 96h |  | 1,328 | 1,328 |  |  |
| 32 | 1.2.3.3 | Progamación | 13.75d | 2019-11-28 | 2020-01-07 | 31 |  |  | 2019-11-28 | 2020-01-06 | 13d | 2019-11-28 | 2020-01-07 | -328.38d | 0d | Scrum Master; Técnico; Analista; Programador | 272h |  | 3,688 | 3,688 |  |  |
| 33 | 1.2.3.4 | Integración y prueba | 9.25d | 2020-01-07 | 2020-01-22 | 32 |  |  | 2020-01-07 | 2020-01-22 | 10d | 2020-01-07 | 2020-01-22 | -336.62d | 0d | Scrum Master; Técnico; Analista; Programador | 96h |  | 1,320 | 1,320 |  |  |
| 34 | 1.2.4 | **Enlazar la puerta enlace con la aplicación de usuario** | 32.25d | 2020-04-02 | 2020-05-18 | 50 |  |  | 2020-04-02 | 2020-05-15 | 32d | 2020-04-02 | 2020-05-18 | -344.75d | 0d |  | 512h |  | 7,168 | 7,168 |  |  |
| 35 | 1.2.4.1 | Planificación | 1d | 2020-04-02 | 2020-04-03 |  |  |  | 2020-04-02 | 2020-04-02 | 1d | 2020-04-02 | 2020-04-03 | -344.75d | 0d | Scrum Master; Técnico | 16h |  | 224 | 224 |  |  |
| 36 | 1.2.4.2 | Diseño del producto | 5d | 2020-04-03 | 2020-04-10 | 35 |  |  | 2020-04-03 | 2020-04-09 | 5d | 2020-04-03 | 2020-04-10 | -344.75d | 0d | Scrum Master; Técnico | 80h |  | 1,120 | 1,120 |  |  |
| 37 | 1.2.4.3 | Programación | 20d | 2020-04-10 | 2020-05-08 | 36 |  |  | 2020-04-10 | 2020-05-07 | 20d | 2020-04-10 | 2020-05-08 | -344.75d | 0d | Scrum Master; Técnico | 320h |  | 4,480 | 4,480 |  |  |
| 38 | 1.2.4.4 | Integración y prueba | 6d | 2020-05-08 | 2020-05-18 | 37 |  |  | 2020-05-08 | 2020-05-15 | 6d | 2020-05-08 | 2020-05-18 | -344.75d | 0d | Scrum Master; Técnico | 96h |  | 1,344 | 1,344 |  |  |
| 39 | 1.3 | **Aplicación de clientes** | 289.38d | 2019-02-04 A | 2020-04-02 |  | 44% | 163.18d | 2019-02-04 | 2020-04-01 | 289d | 2019-02-04 | 2020-04-02 | -20.62d | 0d |  | 1860h | 756h | 25,604.4 | 25,168 | 10,372.4 | Tarea |
| 40 | 1.3.1 | **Creación de la interfaz** | 52.52d | 2019-02-04 A | 2019-04-17 A |  | 100% |  | 2019-02-04 | 2019-04-22 | 54d | 2019-02-04 | 2019-04-17 |  |  |  | 756h | 756h | 10,372.4 | 9,936 | 10,372.4 | Estado Inicial |
| 41 | 1.3.1.1 | Planificación | 2d | 2019-02-04 A | 2019-02-05 A |  | 100% |  | 2019-02-04 | 2019-02-05 | 2d | 2019-02-04 | 2019-02-05 |  |  | Analista; Programador | 32h | 32h | 432 | 432 | 432 |  |
| 42 | 1.3.1.2 | Diseño del producto | 7d | 2019-02-06 A | 2019-02-14 A | 41 | 100% |  | 2019-02-06 | 2019-02-14 | 7d | 2019-02-06 | 2019-02-14 |  |  | Analista; Programador | 112h | 112h | 1,512 | 1,512 | 1,512 |  |
| 43 | 1.3.1.3 | Programación | 38.12d | 2019-02-15 A | 2019-04-10 A | 42 | 100% |  | 2019-02-15 | 2019-04-08 | 37d | 2019-02-15 | 2019-04-10 |  |  | Analista; Programador | 482h | 482h | 6,507 | 6,264 | 6,507 |  |
| 44 | 1.3.1.4 | Integración y prueba | 6.53d | 2019-04-09 A | 2019-04-17 A | 43 | 100% |  | 2019-04-09 | 2019-04-22 | 8d | 2019-04-09 | 2019-04-17 |  |  | Analista; Programador | 130h | 130h | 1,921.4 | 1,728 | 1,921.4 |  |
| 45 | 1.3.2 | **Enlazar la aplicación con la base de datos** | 28.12d | 2020-01-23 | 2020-03-03 | 61, 29 |  |  | 2020-01-23 | 2020-03-02 | 28d | 2020-01-23 | 2020-03-03 | 0.5d | 0d |  | 448h |  | 6,048 | 6,048 |  |  |
| 46 | 1.3.2.1 | Planificación | 1d | 2020-01-23 | 2020-01-24 |  |  |  | 2020-01-23 | 2020-01-23 | 1d | 2020-01-23 | 2020-01-24 | 0.5d | 0d | Analista; Programador | 16h |  | 216 | 216 |  |  |
| 47 | 1.3.2.2 | Diseño del producto | 4d | 2020-01-24 | 2020-01-30 | 46 |  |  | 2020-01-24 | 2020-01-29 | 4d | 2020-01-24 | 2020-01-30 | 0.5d | 0d | Analista; Programador | 64h |  | 864 | 864 |  |  |
| 48 | 1.3.2.3 | Progamación | 18d | 2020-01-30 | 2020-02-25 | 47 |  |  | 2020-01-30 | 2020-02-24 | 18d | 2020-01-30 | 2020-02-25 | 0.5d | 0d | Analista; Programador | 288h |  | 3,888 | 3,888 |  |  |
| 49 | 1.3.2.4 | Integración y prueba | 5d | 2020-02-25 | 2020-03-03 | 48 |  |  | 2020-02-25 | 2020-03-02 | 5d | 2020-02-25 | 2020-03-03 | 0.5d |  | Analista; Programador | 80h |  | 1,080 | 1,080 |  |  |
| 50 | 1.3.3 | **Mostrar los datos recibidos en la interfaz** | 49.25d | 2020-01-23 | 2020-04-02 | 61, 29 |  |  | 2020-01-23 | 2020-04-01 | 49d | 2020-01-23 | 2020-04-02 | -344.75d | 0d |  | 656h |  | 9,184 | 9,184 |  |  |
| 51 | 1.3.3.1 | Planificación | 2d | 2020-01-23 | 2020-01-27 |  |  |  | 2020-01-23 | 2020-01-24 | 2d | 2020-01-23 | 2020-01-27 | -336.75d | 0d | Scrum Master; Técnico | 32h |  | 448 | 448 |  |  |
| 52 | 1.3.3.2 | Diseño del producto | 6d | 2020-01-27 | 2020-02-04 | 51 |  |  | 2020-01-27 | 2020-02-03 | 6d | 2020-01-27 | 2020-02-04 | -336.75d | 0d | Scrum Master; Técnico | 96h |  | 1,344 | 1,344 |  |  |
| 53 | 1.3.3.3 | Programación | 26.38d | 2020-02-04 | 2020-03-24 | 52 |  |  | 2020-02-04 | 2020-03-10 | 26d | 2020-02-04 | 2020-03-24 | -344.75d | 0d | Scrum Master; Técnico | 416h |  | 5,824 | 5,824 |  |  |
| 54 | 1.3.3.4 | Integración y prueba | 7d | 2020-03-24 | 2020-04-02 | 53 |  |  | 2020-03-11 | 2020-04-01 | 14d | 2020-03-24 | 2020-04-02 | -344.75d | 0d | Scrum Master; Técnico | 112h |  | 1,568 | 1,568 |  |  |

| ID | WBS | Task | Type | Duration | Start | Finish | Predecessors | Complete | Remaining | Baseline start | Baseline finish | Baseline duration | Baseline 1 start | Baseline 1 finish | Total slack | Free slack | Constraint | Resources | Work | Actual work | Cost | Baseline cost | Actual cost | Text1 |
| --- | --- | --- | --- | --- | --- | --- | --- | --- | --- | --- | --- | --- | --- | --- | --- | --- | --- | --- | --- | --- | --- | --- | --- | --- |
| 55 | 1.4 | **Base de datos** |  | 269.75d | 2019-05-24 | 2020-06-18 |  |  |  | 2019-05-24 | 2020-06-17 | 269d | 2019-05-24 | 2020-06-18 | -344.75d | 0d |  |  | 1352h |  | 18,384 | 18,384 |  | Tarea |
| 56 | 1.4.1 | **Crear la estructura de los datos** |  | 59.25d | 2019-05-24 | 2019-08-19 | 3, 40 |  |  | 2019-05-24 | 2019-08-16 | 59d | 2019-05-24 | 2019-08-19 | -272.12d | 0d |  |  | 648h |  | 8,744 | 8,744 |  |  |
| 57 | 1.4.1.1 | Planificación |  | 2d | 2019-05-24 | 2019-05-27 |  |  |  | 2019-05-24 | 2019-05-27 | 2d | 2019-05-24 | 2019-05-27 | -254.12d | 0d |  | Analista; Programador | 24h |  | 320 | 320 |  |  |
| 58 | 1.4.1.2 | Diseño del producto |  | 6d | 2019-05-28 | 2019-06-04 | 57 |  |  | 2019-05-28 | 2019-06-04 | 6d | 2019-05-28 | 2019-06-04 | -254.12d | 0d |  | Analista; Programador | 96h |  | 1,296 | 1,296 |  |  |
| 59 | 1.4.1.3 | Programación |  | 26d | 2019-06-05 | 2019-07-11 | 58 |  |  | 2019-06-05 | 2019-07-10 | 26d | 2019-06-05 | 2019-07-11 | -254.12d | 0d |  | Analista; Programador | 416h |  | 5,616 | 5,616 |  |  |
| 60 | 1.4.1.4 | Integración y prueba |  | 12.25d | 2019-07-11 | 2019-08-19 | 59 |  |  | 2019-07-11 | 2019-08-16 | 12d | 2019-07-11 | 2019-08-19 | -272.12d | 0d |  | Analista; Programador | 112h |  | 1,512 | 1,512 |  |  |
| 61 | 1.4.2 | **Recibir peticiones externas** |  | 41.25d | 2019-08-19 | 2019-10-16 | 56 |  |  | 2019-08-19 | 2019-09-18 | 23d | 2019-08-19 | 2019-10-16 | -272.12d | 0d |  |  | 368h |  | 4,968 | 4,968 |  |  |
| 62 | 1.4.2.1 | Planificación |  | 1d | 2019-08-19 | 2019-08-20 |  |  |  | 2019-08-19 | 2019-08-19 | 1d | 2019-08-19 | 2019-08-20 | -272.12d | 0d |  | Analista; Programador | 16h |  | 216 | 216 |  |  |
| 63 | 1.4.2.2 | Diseño del producto |  | 3d | 2019-08-20 | 2019-08-23 | 62 |  |  | 2019-08-20 | 2019-08-22 | 3d | 2019-08-20 | 2019-08-23 | -272.12d | 0d |  | Analista; Programador | 48h |  | 648 | 648 |  |  |
| 64 | 1.4.2.3 | Programación |  | 15d | 2019-08-23 | 2019-09-13 | 63 |  |  | 2019-08-23 | 2019-09-12 | 15d | 2019-08-23 | 2019-09-13 | -272.12d | 0d |  | Analista; Programador | 240h |  | 3,240 | 3,240 |  |  |
| 65 | 1.4.2.4 | Integración y prueba |  | 4d | 2019-09-13 | 2019-10-16 | 64 |  |  | 2019-09-13 | 2019-09-18 | 4d | 2019-09-13 | 2019-10-16 | -272.12d | 0d |  | Analista; Programador | 64h |  | 864 | 864 |  |  |
| 66 | 1.4.3 | **Gestión de cuentas** |  | 23.12d | 2020-05-18 | 2020-06-18 | 34 |  |  | 2020-05-18 | 2020-06-17 | 23d | 2020-05-18 | 2020-06-18 | -344.75d | 0d |  |  | 336h |  | 4,672 | 4,672 |  |  |
| 67 | 1.4.3.1 | Planificación |  | 1d | 2020-05-18 | 2020-05-19 |  |  |  | 2020-05-18 | 2020-05-18 | 1d | 2020-05-18 | 2020-05-19 | -344.75d | 0d |  | Scrum Master; Técnico | 16h |  | 224 | 224 |  |  |
| 68 | 1.4.3.2 | Diseño del producto |  | 3d | 2020-05-19 | 2020-05-22 | 67 |  |  | 2020-05-19 | 2020-05-21 | 3d | 2020-05-19 | 2020-05-22 | -344.75d | 0d |  | Scrum Master; Técnico | 48h |  | 672 | 672 |  |  |
| 69 | 1.4.3.3 | Programación |  | 15d | 2020-05-22 | 2020-06-12 | 68 |  |  | 2020-05-22 | 2020-06-11 | 15d | 2020-05-22 | 2020-06-12 | -344.75d | 0d |  | Scrum Master; Técnico | 240h |  | 3,360 | 3,360 |  |  |
| 70 | 1.4.3.4 | Integración y prueba |  | 4d | 2020-06-12 | 2020-06-18 | 69 |  |  | 2020-06-12 | 2020-06-17 | 4d | 2020-06-12 | 2020-06-18 | -344.75d | 0d |  | Técnico | 32h |  | 416 | 416 |  |  |
| 71 | 1.5 | **Reunión** |  | 361.12d | 2019-03-01 A | 2020-08-07 |  | 17% | 300.94d |  |  |  | 2019-03-01 | 2020-08-07 | 18.38d |  |  |  | 75h | 12h | 1,087 |  | 165 | Reuniones |
| 72 | 1.5.1 | Reunión 1 |  | 1h | 2019-03-01 A | 2019-03-01 A |  | 100% |  |  |  |  | 2019-03-01 | 2019-03-01 |  |  | must finish on 2019-03-01 | Analista; Programador; Scrum Master; Técnico | 4h | 4h | 55 |  | 55 |  |
| 73 | 1.5.2 | Reunión 2 |  | 1h | 2019-04-05 A | 2019-04-05 A |  | 100% |  |  |  |  | 2019-04-05 | 2019-04-05 |  |  | must finish on 2019-04-05 | Analista; Programador; Scrum Master; Técnico | 4h | 4h | 55 |  | 55 |  |
| 74 | 1.5.3 | Reunión 3 |  | 1h | 2019-05-03 A | 2019-05-03 A |  | 100% |  |  |  |  | 2019-05-03 | 2019-05-03 |  |  | must finish on 2019-05-03 | Analista; Programador; Scrum Master; Técnico | 4h | 4h | 55 |  | 55 |  |
| 75 | 1.5.4 | Reunión 4 |  | 1h | 2019-06-07 | 2019-06-07 |  |  |  |  |  |  | 2019-06-07 | 2019-06-07 | 0d |  | must finish on 2019-06-07 | Analista; Programador; Scrum Master; Técnico | 3h |  | 42 |  |  |  |
| 76 | 1.5.5 | Reunión 5 |  | 1h | 2019-07-05 | 2019-07-05 |  |  |  |  |  |  | 2019-07-05 | 2019-07-05 | 0d |  | must finish on 2019-07-05 | Analista; Programador; Scrum Master; Técnico | 4h |  | 55 |  |  |  |
| 77 | 1.5.6 | Reunión 6 |  | 1h | 2019-08-02 | 2019-08-02 |  |  |  |  |  |  | 2019-08-02 | 2019-08-02 | 0d |  | must finish on 2019-08-02 | Analista; Programador; Scrum Master; Técnico | 2h |  | 28 |  |  |  |
| 78 | 1.5.7 | Reunión 7 |  | 1h | 2019-09-06 | 2019-09-06 |  |  |  |  |  |  | 2019-09-06 | 2019-09-06 | 0d |  | must finish on 2019-09-06 | Analista; Programador; Scrum Master; Técnico | 9h |  | 155 |  |  |  |
| 79 | 1.5.8 | Reunión 8 |  | 1h | 2019-10-04 | 2019-10-04 |  |  |  |  |  |  | 2019-10-04 | 2019-10-04 | 0d |  | must finish on 2019-10-04 | Analista; Programador; Scrum Master; Técnico | 4h |  | 55 |  |  |  |
| 80 | 1.5.9 | Reunión 9 |  | 1h | 2019-11-04 | 2019-11-04 |  |  |  |  |  |  | 2019-11-04 | 2019-11-04 | 0d |  | must finish on 2019-11-04 | Analista; Programador; Scrum Master; Técnico | 4h |  | 55 |  |  |  |
| 81 | 1.5.10 | Reunión 10 |  | 1h | 2019-12-16 | 2019-12-16 |  |  |  |  |  |  | 2019-12-16 | 2019-12-16 | 184.12d |  | start no earlier than 2019-12-16 | Analista; Programador; Scrum Master; Técnico | 6h |  | 106 |  |  |  |
| 82 | 1.5.11 | Reunión 11 |  | 1h | 2020-01-23 | 2020-01-23 |  |  |  |  |  |  | 2020-01-23 | 2020-01-23 | 159.25d |  | start no earlier than 2020-01-23 | Analista; Programador; Scrum Master; Técnico | 4h |  | 55 |  |  |  |
| 83 | 1.5.12 | Reunión 12 |  | 1h | 2020-02-07 | 2020-02-07 |  |  |  |  |  |  | 2020-02-07 | 2020-02-07 | 0d |  | must finish on 2020-02-07 | Analista; Programador; Scrum Master; Técnico | 4h |  | 55 |  |  |  |
| 84 | 1.5.13 | Reunión 13 |  | 1h | 2020-03-06 | 2020-03-06 |  |  |  |  |  |  | 2020-03-06 | 2020-03-06 | 0d |  | must finish on 2020-03-06 | Analista; Programador; Scrum Master; Técnico | 4h |  | 55 |  |  |  |
| 85 | 1.5.14 | Reunión 14 |  | 1h | 2020-04-03 | 2020-04-03 |  |  |  |  |  |  | 2020-04-03 | 2020-04-03 | 0d |  | must finish on 2020-04-03 | Analista; Programador; Scrum Master; Técnico | 4h |  | 55 |  |  |  |
| 86 | 1.5.15 | Reunión 15 |  | 1h | 2020-05-01 | 2020-05-01 |  |  |  |  |  |  | 2020-05-01 | 2020-05-01 | 88.38d |  | finish no earlier than 2020-05-01 | Analista; Programador; Scrum Master; Técnico | 3h |  | 41 |  |  |  |
| 87 | 1.5.16 | Reunión 16 |  | 1h | 2020-06-05 | 2020-06-05 |  |  |  |  |  |  | 2020-06-05 | 2020-06-05 | 0d |  | must finish on 2020-06-05 | Analista; Programador; Scrum Master; Técnico | 4h |  | 55 |  |  |  |
| 88 | 1.5.17 | Reunión 17 |  | 1h | 2020-07-03 | 2020-07-03 |  |  |  |  |  |  | 2020-07-03 | 2020-07-03 | 0d |  | must finish on 2020-07-03 | Analista; Programador; Scrum Master; Técnico | 4h |  | 55 |  |  |  |
| 89 | 1.5.18 | Reunión 18 |  | 1h | 2020-08-07 | 2020-08-07 |  |  |  |  |  |  | 2020-08-07 | 2020-08-07 | 0d |  | must finish on 2020-08-07 | Analista; Programador; Scrum Master; Técnico | 4h |  | 55 |  |  |  |
| 90 | 1.6 | Compra de recursos iniciales | manual | 1d | 2019-02-04 | 2019-02-04 |  |  |  |  |  |  | 2019-02-04 | 2019-02-04 |  |  |  | Ordenadores |  |  | 5,200 |  |  |  |
| 91 | 1.7 | Compra de Hardware de desarrollo | manual | 1d | 2019-02-04 | 2019-02-04 |  |  |  |  |  |  | 2019-02-04 | 2019-02-04 |  |  |  | Hardware de desarrollo |  |  | 20,000 |  |  |  |

| ID | WBS | Task | Type | Duration | Start | Finish | Predecessors | Baseline 1 start | Baseline 1 finish | Total slack | Constraint | Resources | Cost |
| --- | --- | --- | --- | --- | --- | --- | --- | --- | --- | --- | --- | --- | --- |
| 92 | 1.8 | **Pago de internet** |  | 377d | 2019-02-04 | 2020-08-03 |  | 2019-02-04 | 2020-08-03 | 0d |  | Servicio de Internet | 1,600 |
| 93 | 1.8.1 | Pago de internet 1 | manual | 1d | 2019-02-04 | 2019-02-04 |  | 2019-02-04 | 2019-02-04 |  | start no earlier than 2019-02-04 | Servicio de Internet | 80 |
| 94 | 1.8.2 | Pago de internet 2 | manual | 1d | 2019-03-04 | 2019-03-04 |  | 2019-03-04 | 2019-03-04 |  | start no earlier than 2019-03-04 | Servicio de Internet | 80 |
| 95 | 1.8.3 | Pago de internet 3 | manual | 1d | 2019-04-01 | 2019-04-01 |  | 2019-04-01 | 2019-04-01 |  | start no earlier than 2019-04-01 | Servicio de Internet | 80 |
| 96 | 1.8.4 | Pago de internet 4 | manual | 1d | 2019-05-06 | 2019-05-06 |  | 2019-05-06 | 2019-05-06 |  | start no earlier than 2019-05-06 | Servicio de Internet | 80 |
| 97 | 1.8.5 | Pago de internet 5 | manual | 1d | 2019-06-03 | 2019-06-03 |  | 2019-06-03 | 2019-06-03 |  | start no earlier than 2019-06-03 | Servicio de Internet | 80 |
| 98 | 1.8.6 | Pago de internet 6 | manual | 1d | 2019-07-01 | 2019-07-01 |  | 2019-07-01 | 2019-07-01 |  | start no earlier than 2019-07-01 | Servicio de Internet | 80 |
| 99 | 1.8.7 | Pago de internet 7 | manual | 1d | 2019-08-05 | 2019-08-05 |  | 2019-08-05 | 2019-08-05 |  | start no earlier than 2019-08-05 | Servicio de Internet | 80 |
| 100 | 1.8.8 | Pago de internet 8 | manual | 1d | 2019-09-02 | 2019-09-02 |  | 2019-09-02 | 2019-09-02 |  | start no earlier than 2019-09-02 | Servicio de Internet | 80 |
| 101 | 1.8.9 | Pago de internet 9 | manual | 1d | 2019-10-07 | 2019-10-07 |  | 2019-10-07 | 2019-10-07 |  | start no earlier than 2019-10-07 | Servicio de Internet | 80 |
| 102 | 1.8.10 | Pago de internet 10 | manual | 1d | 2019-11-04 | 2019-11-04 |  | 2019-11-04 | 2019-11-04 |  | start no earlier than 2019-11-04 | Servicio de Internet | 80 |
| 103 | 1.8.11 | Pago de internet 11 | manual | 1d | 2019-12-02 | 2019-12-02 |  | 2019-12-02 | 2019-12-02 |  | start no earlier than 2019-12-02 | Servicio de Internet | 80 |
| 104 | 1.8.12 | Pago de internet 12 | manual | 1d | 2020-01-06 | 2020-01-06 |  | 2020-01-06 | 2020-01-06 |  | start no earlier than 2020-01-06 | Servicio de Internet | 80 |
| 105 | 1.8.13 | Pago de internet 13 | manual | 1d | 2020-02-03 | 2020-02-03 |  | 2020-02-03 | 2020-02-03 |  | start no earlier than 2020-02-03 | Servicio de Internet | 80 |
| 106 | 1.8.14 | Pago de internet 14 | manual | 1d | 2020-03-02 | 2020-03-02 |  | 2020-03-02 | 2020-03-02 |  | start no earlier than 2020-03-02 | Servicio de Internet | 80 |
| 107 | 1.8.15 | Pago de internet 15 | manual | 1d | 2020-04-06 | 2020-04-06 |  | 2020-04-06 | 2020-04-06 |  | start no earlier than 2020-04-06 | Servicio de Internet | 80 |
| 108 | 1.8.16 | Pago de internet 16 | manual | 1d | 2020-05-04 | 2020-05-04 |  | 2020-05-04 | 2020-05-04 |  | start no earlier than 2020-05-04 | Servicio de Internet | 80 |
| 109 | 1.8.17 | Pago de internet 17 | manual | 1d | 2020-06-01 | 2020-06-01 |  | 2020-06-01 | 2020-06-01 |  | start no earlier than 2020-06-01 | Servicio de Internet | 80 |
| 110 | 1.8.18 | Pago de internet 18 | manual | 1d | 2020-07-06 | 2020-07-06 |  | 2020-07-06 | 2020-07-06 |  | start no earlier than 2020-07-06 | Servicio de Internet | 80 |
| 111 | 1.8.19 | Pago de internet 19 | manual | 1d | 2020-08-03 | 2020-08-03 |  | 2020-08-03 | 2020-08-03 |  | start no earlier than 2020-08-03 | Servicio de Internet | 80 |
| 112 | 1.9 | **Pago de la base de datos** |  | 377d | 2019-02-04 | 2020-08-03 | 55 | 2019-02-04 | 2020-08-03 | 0d |  | Base de datos Azure | 90,000 |
| 113 | 1.9.1 | Pago de la base de datos 1 | manual | 1d | 2019-02-04 | 2019-02-04 |  | 2019-02-04 | 2019-02-04 |  | start no earlier than 2019-02-04 | Base de datos Azure | 4,500 |
| 114 | 1.9.2 | Pago de la base de datos 2 | manual | 1d | 2019-03-04 | 2019-03-04 |  | 2019-03-04 | 2019-03-04 |  | start no earlier than 2019-03-04 | Base de datos Azure | 4,500 |
| 115 | 1.9.3 | Pago de la base de datos 3 | manual | 1d | 2019-04-01 | 2019-04-01 |  | 2019-04-01 | 2019-04-01 |  | start no earlier than 2019-04-01 | Base de datos Azure | 4,500 |
| 116 | 1.9.4 | Pago de la base de datos 4 | manual | 1d | 2019-05-06 | 2019-05-06 |  | 2019-05-06 | 2019-05-06 |  | start no earlier than 2019-05-06 | Base de datos Azure | 4,500 |
| 117 | 1.9.5 | Pago de la base de datos 5 | manual | 1d | 2019-06-03 | 2019-06-03 |  | 2019-06-03 | 2019-06-03 |  | start no earlier than 2019-06-03 | Base de datos Azure | 4,500 |
| 118 | 1.9.6 | Pago de la base de datos 6 | manual | 1d | 2019-07-01 | 2019-07-01 |  | 2019-07-01 | 2019-07-01 |  | start no earlier than 2019-07-01 | Base de datos Azure | 4,500 |
| 119 | 1.9.7 | Pago de la base de datos 7 | manual | 1d | 2019-08-05 | 2019-08-05 |  | 2019-08-05 | 2019-08-05 |  | start no earlier than 2019-08-05 | Base de datos Azure | 4,500 |
| 120 | 1.9.8 | Pago de la base de datos 8 | manual | 1d | 2019-09-02 | 2019-09-02 |  | 2019-09-02 | 2019-09-02 |  | start no earlier than 2019-09-02 | Base de datos Azure | 4,500 |
| 121 | 1.9.9 | Pago de la base de datos 9 | manual | 1d | 2019-10-07 | 2019-10-07 |  | 2019-10-07 | 2019-10-07 |  | start no earlier than 2019-10-07 | Base de datos Azure | 4,500 |
| 122 | 1.9.10 | Pago de la base de datos 10 | manual | 1d | 2019-11-04 | 2019-11-04 |  | 2019-11-04 | 2019-11-04 |  | start no earlier than 2019-11-04 | Base de datos Azure | 4,500 |
| 123 | 1.9.11 | Pago de la base de datos 11 | manual | 1d | 2019-12-02 | 2019-12-02 |  | 2019-12-02 | 2019-12-02 |  | start no earlier than 2019-12-02 | Base de datos Azure | 4,500 |
| 124 | 1.9.12 | Pago de la base de datos 12 | manual | 1d | 2020-01-06 | 2020-01-06 |  | 2020-01-06 | 2020-01-06 |  | start no earlier than 2020-01-06 | Base de datos Azure | 4,500 |
| 125 | 1.9.13 | Pago de la base de datos 13 | manual | 1d | 2020-02-03 | 2020-02-03 |  | 2020-02-03 | 2020-02-03 |  | start no earlier than 2020-02-03 | Base de datos Azure | 4,500 |
| 126 | 1.9.14 | Pago de la base de datos 14 | manual | 1d | 2020-03-02 | 2020-03-02 |  | 2020-03-02 | 2020-03-02 |  | start no earlier than 2020-03-02 | Base de datos Azure | 4,500 |
| 127 | 1.9.15 | Pago de la base de datos 15 | manual | 1d | 2020-04-06 | 2020-04-06 |  | 2020-04-06 | 2020-04-06 |  | start no earlier than 2020-04-06 | Base de datos Azure | 4,500 |
| 128 | 1.9.16 | Pago de la base de datos 16 | manual | 1d | 2020-05-04 | 2020-05-04 |  | 2020-05-04 | 2020-05-04 |  | start no earlier than 2020-05-04 | Base de datos Azure | 4,500 |
| 129 | 1.9.17 | Pago de la base de datos 17 | manual | 1d | 2020-06-01 | 2020-06-01 |  | 2020-06-01 | 2020-06-01 |  | start no earlier than 2020-06-01 | Base de datos Azure | 4,500 |
| 130 | 1.9.18 | Pago de la base de datos 18 | manual | 1d | 2020-07-06 | 2020-07-06 |  | 2020-07-06 | 2020-07-06 |  | start no earlier than 2020-07-06 | Base de datos Azure | 4,500 |
| 131 | 1.9.19 | Pago de la base de datos 19 | manual | 1d | 2020-08-03 | 2020-08-03 |  | 2020-08-03 | 2020-08-03 |  | start no earlier than 2020-08-03 | Base de datos Azure | 4,500 |
