# GestiónProyecto_Llamathrust

Schedule from MS Project, 2019-02-04 to 2021-03-25, costs in €, A marks actual dates.

## Calendars

- Estándar: Mon-Fri 09:00-13:00, 15:00-19:00; Sat-Sun off. Exceptions (off unless hours are given): 2019-04-18 (Jueves Santo, recurring), 2019-04-19 (Viernes Santo, recurring), 2019-05-01 (Fiesta del Trabajo, recurring), 2019-05-02 (Fiesta de la Comunidad de Madrid, recurring), 2019-08-06 (Santos Justo y Pastor, recurring), 2019-08-15 (Asunción de la Virgen, recurring), 2019-10-09 (Bautismo de Miguel de Cervantes, recurring), 2019-10-12 (Día de la Hispanidad, recurring), 2019-11-01 (Todos los Santos, recurring), 2019-12-06 (Día de la Constitución, recurring), 2019-12-09 (Inmaculada Concepción, recurring), 2019-12-25 (Navidad, recurring), 2019-12-31 (Víspera de Año Nuevo, recurring), 2020-01-01 (Año Nuevo, recurring), 2020-03-17 (San Patricio, recurring).

## Resources

| Resource | Rate |
| --- | --- |
| Scrum Master | 15 |
| Analista | 13 |
| Programador | 14 |
| Técnico | 13 |

## Schedule

| ID | WBS | Task | Duration | Start | Finish | Predecessors | Complete | Remaining | Total slack | Resources | Work | Actual work | Cost | Actual cost | Text1 |
| --- | --- | --- | --- | --- | --- | --- | --- | --- | --- | --- | --- | --- | --- | --- | --- |
| 1 | 1 | **Llamathrust** | 545d | 2019-02-04 A | 2021-03-25 |  | 13% | 472.19d | 0d |  | 11280h | 1568h | 155,768 | 21,584 |  |
| 2 | 1.1 | **Dispositivos Enchufe** | 545d | 2019-02-04 A | 2021-03-25 |  | 12% | 478.16d | 0d |  | 6344h | 832h | 87,896 | 11,648 | Tarea |
| 3 | 1.1.1 | **Tomar datos de los sensores** | 124d | 2019-02-04 A | 2019-07-31 |  | 42% | 71.58d | 0d |  | 1808h | 832h | 25,472 | 11,648 | Estado Inicial |
| 4 | 1.1.1.1 | Planificación | 7d | 2019-02-04 A | 2019-02-12 A |  | 100% |  |  | Scrum Master; Técnico | 112h | 112h | 1,568 | 1,568 |  |
| 5 | 1.1.1.2 | Diseño del producto | 18d | 2019-02-13 A | 2019-03-08 A | 4 | 100% |  |  | Scrum Master; Técnico | 288h | 288h | 4,032 | 4,032 |  |
| 6 | 1.1.1.3 | Programación | 76d | 2019-03-11 A | 2019-07-01 | 5 | 36% | 49d | 0d | Scrum Master; Técnico | 1056h | 432h | 14,944 | 6,048 |  |
| 7 | 1.1.1.4 | Integración y prueba | 22d | 2019-07-02 | 2019-07-31 | 6 |  |  | 0d | Scrum Master; Técnico | 352h |  | 4,928 |  |  |
| 8 | 1.1.2 | **Conectar los enchufes con la puerta de enlace** | 164d | 2019-08-01 | 2020-03-31 | 3, 40 |  |  | 0d |  | 2232h |  | 31,320 |  |  |
| 9 | 1.1.2.1 | Planificación | 8d | 2019-08-01 | 2019-08-13 |  |  |  | 0d | Scrum Master; Técnico | 128h |  | 1,792 |  |  |
| 10 | 1.1.2.2 | Diseño del producto | 21d | 2019-08-14 | 2019-09-12 | 9 |  |  | 0d | Scrum Master; Técnico | 336h |  | 4,704 |  |  |
| 11 | 1.1.2.3 | Programación | 96d | 2019-09-13 | 2020-02-11 | 10 |  |  | 0d | Scrum Master; Técnico | 1352h |  | 19,000 |  |  |
| 12 | 1.1.2.4 | Integración y prueba | 32d | 2020-02-12 | 2020-03-31 | 11 |  |  | 0d | Scrum Master; Técnico | 416h |  | 5,824 |  |  |
| 13 | 1.1.3 | **Gestión de tareas que tomarán los datos periódicamente** | 144d | 2020-09-07 | 2021-03-25 | 24 |  |  | 0d |  | 2304h |  | 31,104 |  |  |
| 14 | 1.1.3.1 | Planificación | 8d | 2020-09-07 | 2020-09-16 |  |  |  | 0d | Analista; Programador | 128h |  | 1,728 |  |  |
| 15 | 1.1.3.2 | Diseño del producto | 21d | 2020-09-17 | 2020-10-15 | 14 |  |  | 0d | Analista; Programador | 336h |  | 4,536 |  |  |
| 16 | 1.1.3.3 | Programación | 89d | 2020-10-16 | 2021-02-17 | 15 |  |  | 0d | Analista; Programador | 1424h |  | 19,224 |  |  |
| 17 | 1.1.3.4 | Integración y prueba | 26d | 2021-02-18 | 2021-03-25 | 16 |  |  | 0d | Analista; Programador | 416h |  | 5,616 |  |  |
| 18 | 1.2 | **Dispositivos de puerta de enlace** | 142d | 2020-04-01 | 2020-10-15 |  |  |  | 0d |  | 1712h |  | 23,840 |  | Tarea |
| 19 | 1.2.1 | **Conectar la puerta de enlace con los enchufes** | 21d | 2020-04-01 | 2020-04-29 | 8 |  |  | 0d |  | 336h |  | 4,704 |  |  |
| 20 | 1.2.1.1 | Planificación | 1d | 2020-04-01 | 2020-04-01 |  |  |  | 0d | Scrum Master; Técnico | 16h |  | 224 |  |  |
| 21 | 1.2.1.2 | Diseño del producto | 3d | 2020-04-02 | 2020-04-06 | 20 |  |  | 0d | Scrum Master; Técnico | 48h |  | 672 |  |  |
| 22 | 1.2.1.3 | Programación | 13d | 2020-04-07 | 2020-04-23 | 21 |  |  | 0d | Scrum Master; Técnico | 208h |  | 2,912 |  |  |
| 23 | 1.2.1.4 | Integración y prueba | 4d | 2020-04-24 | 2020-04-29 | 22 |  |  | 0d | Scrum Master; Técnico | 64h |  | 896 |  |  |
| 24 | 1.2.2 | **Conectar la puerta de enlace con la base de datos** | 16d | 2020-08-14 | 2020-09-04 | 45 |  |  | 0d |  | 256h |  | 3,456 |  |  |
| 25 | 1.2.2.1 | Planificación | 1d | 2020-08-14 | 2020-08-14 |  |  |  | 0d | Analista; Programador | 16h |  | 216 |  |  |
| 26 | 1.2.2.2 | Diseño del producto | 2d | 2020-08-17 | 2020-08-18 | 25 |  |  | 0d | Analista; Programador | 32h |  | 432 |  |  |
| 27 | 1.2.2.3 | Programación | 10d | 2020-08-19 | 2020-09-01 | 26 |  |  | 0d | Analista; Programador | 160h |  | 2,160 |  |  |
| 28 | 1.2.2.4 | Integración y prueba | 3d | 2020-09-02 | 2020-09-04 | 27 |  |  | 0d | Analista; Programador | 48h |  | 648 |  |  |

| ID | WBS | Task | Duration | Start | Finish | Predecessors | Complete | Remaining | Total slack | Free slack | Resources | Work | Actual work | Cost | Actual cost | Text1 |
| --- | --- | --- | --- | --- | --- | --- | --- | --- | --- | --- | --- | --- | --- | --- | --- | --- |
| 29 | 1.2.3 | **Procesar las medidas recibidas de los sensores** | 48d | 2020-04-30 | 2020-07-06 | 19 |  |  | 0d |  |  | 608h |  | 8,512 |  |  |
| 30 | 1.2.3.1 | Planificación | 2d | 2020-04-30 | 2020-05-01 |  |  |  | 0d |  | Scrum Master; Técnico | 32h |  | 448 |  |  |
| 31 | 1.2.3.2 | Diseño del producto | 5d | 2020-05-04 | 2020-05-08 | 30 |  |  | 0d |  | Scrum Master; Técnico | 80h |  | 1,120 |  |  |
| 32 | 1.2.3.3 | Progamación | 24d | 2020-05-11 | 2020-06-11 | 31 |  |  | 0d |  | Scrum Master; Técnico | 384h |  | 5,376 |  |  |
| 33 | 1.2.3.4 | Integración y prueba | 13d | 2020-06-12 | 2020-07-06 | 32 |  |  | 0d |  | Scrum Master; Técnico | 112h |  | 1,568 |  |  |
| 34 | 1.2.4 | **Enlazar la puerta enlace con la aplicación de usuario** | 32d | 2020-09-02 | 2020-10-15 | 50 |  |  | 92d | 0d |  | 512h |  | 7,168 |  |  |
| 35 | 1.2.4.1 | Planificación | 1d | 2020-09-02 | 2020-09-02 |  |  |  | 92d | 0d | Scrum Master; Técnico | 16h |  | 224 |  |  |
| 36 | 1.2.4.2 | Diseño del producto | 5d | 2020-09-03 | 2020-09-09 | 35 |  |  | 92d | 0d | Scrum Master; Técnico | 80h |  | 1,120 |  |  |
| 37 | 1.2.4.3 | Programación | 20d | 2020-09-10 | 2020-10-07 | 36 |  |  | 92d | 0d | Scrum Master; Técnico | 320h |  | 4,480 |  |  |
| 38 | 1.2.4.4 | Integración y prueba | 6d | 2020-10-08 | 2020-10-15 | 37 |  |  | 92d |  | Scrum Master; Técnico | 96h |  | 1,344 |  |  |
| 39 | 1.3 | **Aplicación de clientes** | 398d | 2019-02-04 A | 2020-09-01 |  | 41% | 236.74d | 92d |  |  | 1840h | 736h | 25,168 | 9,936 | Tarea |
| 40 | 1.3.1 | **Creación de la interfaz** | 47d | 2019-02-04 A | 2019-04-09 A |  | 100% |  |  |  |  | 736h | 736h | 9,936 | 9,936 | Estado Inicial |
| 41 | 1.3.1.1 | Planificación | 2d | 2019-02-04 A | 2019-02-05 A |  | 100% |  |  |  | Analista; Programador | 32h | 32h | 432 | 432 |  |
| 42 | 1.3.1.2 | Diseño del producto | 7d | 2019-02-06 A | 2019-02-14 A | 41 | 100% |  |  |  | Analista; Programador | 112h | 112h | 1,512 | 1,512 |  |
| 43 | 1.3.1.3 | Programación | 30d | 2019-02-15 A | 2019-03-28 A | 42 | 100% |  |  |  | Analista; Programador | 464h | 464h | 6,264 | 6,264 |  |
| 44 | 1.3.1.4 | Integración y prueba | 8d | 2019-03-29 A | 2019-04-09 A | 43 | 100% |  |  |  | Analista; Programador | 128h | 128h | 1,728 | 1,728 |  |
| 45 | 1.3.2 | **Enlazar la aplicación con la base de datos** | 28d | 2020-07-07 | 2020-08-13 | 61, 29 |  |  | 0d |  |  | 448h |  | 6,048 |  |  |
| 46 | 1.3.2.1 | Planificación | 1d | 2020-07-07 | 2020-07-07 |  |  |  | 0d |  | Analista; Programador | 16h |  | 216 |  |  |
| 47 | 1.3.2.2 | Diseño del producto | 4d | 2020-07-08 | 2020-07-13 | 46 |  |  | 0d |  | Analista; Programador | 64h |  | 864 |  |  |
| 48 | 1.3.2.3 | Progamación | 18d | 2020-07-14 | 2020-08-06 | 47 |  |  | 0d |  | Analista; Programador | 288h |  | 3,888 |  |  |
| 49 | 1.3.2.4 | Integración y prueba | 5d | 2020-08-07 | 2020-08-13 | 48 |  |  | 0d |  | Analista; Programador | 80h |  | 1,080 |  |  |
| 50 | 1.3.3 | **Mostrar los datos recibidos en la interfaz** | 41d | 2020-07-07 | 2020-09-01 | 61, 29 |  |  | 92d | 0d |  | 656h |  | 9,184 |  |  |
| 51 | 1.3.3.1 | Planificación | 2d | 2020-07-07 | 2020-07-08 |  |  |  | 92d | 0d | Scrum Master; Técnico | 32h |  | 448 |  |  |
| 52 | 1.3.3.2 | Diseño del producto | 6d | 2020-07-09 | 2020-07-16 | 51 |  |  | 92d | 0d | Scrum Master; Técnico | 96h |  | 1,344 |  |  |
| 53 | 1.3.3.3 | Programación | 26d | 2020-07-17 | 2020-08-21 | 52 |  |  | 92d | 0d | Scrum Master; Técnico | 416h |  | 5,824 |  |  |
| 54 | 1.3.3.4 | Integración y prueba | 7d | 2020-08-24 | 2020-09-01 | 53 |  |  | 92d |  | Scrum Master; Técnico | 112h |  | 1,568 |  |  |

| ID | WBS | Task | Duration | Start | Finish | Predecessors | Total slack | Free slack | Resources | Work | Cost | Text1 |
| --- | --- | --- | --- | --- | --- | --- | --- | --- | --- | --- | --- | --- |
| 55 | 1.4 | **Base de datos** | 324d | 2019-08-09 | 2020-11-17 |  | 92d |  |  | 1384h | 18,864 | Tarea |
| 56 | 1.4.1 | **Crear la estructura de los datos** | 45d | 2019-08-09 | 2019-10-14 | 3, 40 | 160d | 0d |  | 648h | 8,744 |  |
| 57 | 1.4.1.1 | Planificación | 3d | 2019-08-09 | 2019-08-19 |  | 159d | 0d | Analista; Programador | 24h | 320 |  |
| 58 | 1.4.1.2 | Diseño del producto | 6d | 2019-08-20 | 2019-08-27 | 57 | 159d | 0d | Analista; Programador | 96h | 1,296 |  |
| 59 | 1.4.1.3 | Programación | 26d | 2019-08-28 | 2019-10-02 | 58 | 159d | 0d | Analista; Programador | 416h | 5,616 |  |
| 60 | 1.4.1.4 | Integración y prueba | 7d | 2019-10-03 | 2019-10-14 | 59 | 160d |  | Analista; Programador | 112h | 1,512 |  |
| 61 | 1.4.2 | **Recibir peticiones externas** | 23d | 2019-10-15 | 2019-11-15 | 56 | 160d |  |  | 368h | 4,968 |  |
| 62 | 1.4.2.1 | Planificación | 1d | 2019-10-15 | 2019-10-15 |  | 160d | 0d | Analista; Programador | 16h | 216 |  |
| 63 | 1.4.2.2 | Diseño del producto | 3d | 2019-10-16 | 2019-10-18 | 62 | 160d | 0d | Analista; Programador | 48h | 648 |  |
| 64 | 1.4.2.3 | Programación | 15d | 2019-10-21 | 2019-11-11 | 63 | 160d | 0d | Analista; Programador | 240h | 3,240 |  |
| 65 | 1.4.2.4 | Integración y prueba | 4d | 2019-11-12 | 2019-11-15 | 64 | 160d |  | Analista; Programador | 64h | 864 |  |
| 66 | 1.4.3 | **Gestión de cuentas** | 23d | 2020-10-16 | 2020-11-17 | 34 | 92d |  |  | 368h | 5,152 |  |
| 67 | 1.4.3.1 | Planificación | 1d | 2020-10-16 | 2020-10-16 |  | 92d | 0d | Scrum Master; Técnico | 16h | 224 |  |
| 68 | 1.4.3.2 | Diseño del producto | 3d | 2020-10-19 | 2020-10-21 | 67 | 92d | 0d | Scrum Master; Técnico | 48h | 672 |  |
| 69 | 1.4.3.3 | Programación | 15d | 2020-10-22 | 2020-11-11 | 68 | 92d | 0d | Scrum Master; Técnico | 240h | 3,360 |  |
| 70 | 1.4.3.4 | Integración y prueba | 4d | 2020-11-12 | 2020-11-17 | 69 | 92d |  | Scrum Master; Técnico | 64h | 896 |  |
