# GestiónProyecto_Llamathrust_Optimizado

Schedule from MS Project, 2019-02-04 to 2020-09-02, status date 2019-05-11, costs in €, A marks actual dates.

## Calendars

- Estándar: Mon-Fri 09:00-13:00, 15:00-19:00; Sat-Sun off. Exceptions (off unless hours are given): 2019-04-18 (Jueves Santo, recurring), 2019-04-19 (Viernes Santo, recurring), 2019-05-01 (Fiesta del Trabajo, recurring), 2019-05-02 (Fiesta de la Comunidad de Madrid, recurring), 2019-08-06 (Santos Justo y Pastor, recurring), 2019-08-15 (Asunción de la Virgen, recurring), 2019-10-09 (Bautismo de Miguel de Cervantes, recurring), 2019-10-12 (Día de la Hispanidad, recurring), 2019-11-01 (Todos los Santos, recurring), 2019-12-06 (Día de la Constitución, recurring), 2019-12-09 (Inmaculada Concepción, recurring), 2019-12-25 (Navidad, recurring), 2019-12-31 (Víspera de Año Nuevo, recurring), 2020-01-01 (Año Nuevo, recurring), 2020-03-17 (San Patricio, recurring).

## Resources

| Resource | Rate |
| --- | --- |
| Scrum Master | 15 |
| Analista | 13 |
| Programador | 14 |
| Técnico | 13 |

## Schedule

| ID | WBS | Task | Duration | Start | Finish | Predecessors | Complete | Remaining | Total slack | Free slack | Constraint | Resources | Work | Actual work | Cost | Actual cost | Text1 |
| --- | --- | --- | --- | --- | --- | --- | --- | --- | --- | --- | --- | --- | --- | --- | --- | --- | --- |
| 1 | 1 | **Llamathrust** | 399d? | 2019-02-04 A | 2020-09-02 |  | 17% | 331.47d? | 0d |  |  |  | 10328h | 1676.8h | 142,080 | 23,080 |  |
| 2 | 1.1 | **Dispositivos Enchufe** | 399d | 2019-02-04 A | 2020-09-02 |  | 18% | 325.56d | 0d |  |  |  | 5560h | 940.8h | 76,840 | 13,144 | Tarea |
| 3 | 1.1.1 | **Tomar datos de los sensores** | 75d | 2019-02-04 A | 2019-05-23 |  | 75% | 18.85d | 18d | 0d |  |  | 1536h | 940.8h | 21,328 | 13,144 | Estado Inicial |
| 4 | 1.1.1.1 | Planificación | 7d | 2019-02-04 A | 2019-02-12 A |  | 100% |  |  |  |  | Scrum Master; Técnico | 112h | 112h | 1,568 | 1,568 |  |
| 5 | 1.1.1.2 | Diseño del producto | 18d | 2019-02-13 A | 2019-03-08 A | 4 | 100% |  |  |  |  | Scrum Master; Técnico | 288h | 288h | 4,032 | 4,032 |  |
| 6 | 1.1.1.3 | Programación | 38d | 2019-03-11 A | 2019-05-08 | 5 | 80% | 7.6d | 6d | 0d |  | Scrum Master; Técnico; Analista; Programador | 784h | 540.8h | 10,888 | 7,544 |  |
| 7 | 1.1.1.4 | Integración y prueba | 11d | 2019-05-09 | 2019-05-23 | 6 |  |  | 6d |  |  | Scrum Master; Técnico; Analista; Programador | 352h |  | 4,840 |  |  |
| 8 | 1.1.2 | **Conectar los enchufes con la puerta de enlace** | 113d | 2019-05-24 | 2019-11-04 | 3, 41 |  |  | 18d | 0d |  |  | 1856h |  | 26,076 |  |  |
| 9 | 1.1.2.1 | Planificación | 8d | 2019-05-24 | 2019-06-04 |  |  |  | 18d | 0d |  | Scrum Master | 64h |  | 960 |  |  |
| 10 | 1.1.2.2 | Diseño del producto | 21d | 2019-06-05 | 2019-07-03 | 9 |  |  | 18d | 0d |  | Scrum Master | 168h |  | 2,520 |  |  |
| 11 | 1.1.2.3 | Programación | 71d | 2019-07-04 | 2019-10-15 | 10 |  |  | 18d | 0d | start no earlier than 2019-07-04 | Scrum Master; Técnico; Analista [25%]; Programador [25%] | 1208h |  | 16,876 |  |  |
| 12 | 1.1.2.4 | Integración y prueba | 13d | 2019-10-16 | 2019-11-04 | 11 |  |  | 18d |  |  | Scrum Master; Técnico; Analista; Programador | 416h |  | 5,720 |  |  |
| 13 | 1.1.3 | **Gestión de tareas que tomarán los datos periódicamente** | 115d | 2020-03-26 | 2020-09-02 | 25 |  |  | 0d |  |  |  | 2168h |  | 29,436 |  |  |
| 14 | 1.1.3.1 | Planificación | 8d | 2020-03-26 | 2020-04-06 |  |  |  | 1d | 0d |  | Analista; Programador | 128h |  | 1,728 |  |  |
| 15 | 1.1.3.2 | Diseño del producto | 22d | 2020-04-07 | 2020-05-06 | 14 |  |  | 1d |  |  | Analista; Programador | 336h |  | 4,536 |  |  |
| 16 | 1.1.3.3 | Programación | 71d | 2020-05-08 | 2020-08-14 | 15 |  |  | 0d |  | start no earlier than 2020-05-08 | Analista; Programador; Scrum Master [25%]; Técnico [25%] | 1288h |  | 17,452 |  |  |
| 17 | 1.1.3.4 | Integración y prueba | 13d | 2020-08-17 | 2020-09-02 | 16 |  |  | 0d |  |  | Analista; Programador; Scrum Master; Técnico | 416h |  | 5,720 |  |  |
| 18 | 1.2 | **Dispositivos de puerta de enlace** | 133d? | 2019-11-05 | 2020-05-15 |  |  |  | 0d |  |  |  | 1576h |  | 21,688 |  | Tarea |
| 20 | 1.2.1 | **Conectar la puerta de enlace con los enchufes** | 11d | 2019-11-05 | 2019-11-19 | 8 |  |  | 18d | 0d |  |  | 320h |  | 4,400 |  |  |
| 21 | 1.2.1.1 | Planificación | 1d | 2019-11-05 | 2019-11-05 |  |  |  | 18d | 0d |  | Scrum Master; Técnico | 16h |  | 224 |  |  |
| 22 | 1.2.1.2 | Diseño del producto | 1d | 2019-11-06 | 2019-11-06 | 21 |  |  | 18d | 0d |  | Scrum Master; Técnico; Programador; Analista | 32h |  | 440 |  |  |
| 23 | 1.2.1.3 | Programación | 7d | 2019-11-07 | 2019-11-15 | 22 |  |  | 18d | 0d |  | Scrum Master; Técnico; Analista; Programador | 224h |  | 3,080 |  |  |
| 24 | 1.2.1.4 | Integración y prueba | 2d | 2019-11-15 | 2019-11-19 | 23 |  |  | 18d |  |  | Scrum Master; Técnico; Analista; Programador | 48h |  | 656 |  |  |
| 25 | 1.2.2 | **Conectar la puerta de enlace con la base de datos** | 16d | 2020-03-03 | 2020-03-25 | 46 |  |  | 1d | 0d |  |  | 256h |  | 3,456 |  |  |
| 26 | 1.2.2.1 | Planificación | 1d | 2020-03-03 | 2020-03-03 |  |  |  | 1d | 0d |  | Analista; Programador | 16h |  | 216 |  |  |
| 27 | 1.2.2.2 | Diseño del producto | 2d | 2020-03-04 | 2020-03-05 | 26 |  |  | 1d | 0d |  | Analista; Programador | 32h |  | 432 |  |  |
| 28 | 1.2.2.3 | Programación | 10d | 2020-03-06 | 2020-03-20 | 27 |  |  | 1d | 0d |  | Analista; Programador | 160h |  | 2,160 |  |  |
| 29 | 1.2.2.4 | Integración y prueba | 3d | 2020-03-23 | 2020-03-25 | 28 |  |  | 1d |  |  | Analista; Programador | 48h |  | 648 |  |  |

| ID | WBS | Task | Duration | Start | Finish | Predecessors | Complete | Remaining | Total slack | Free slack | Resources | Work | Actual work | Cost | Actual cost | Text1 |
| --- | --- | --- | --- | --- | --- | --- | --- | --- | --- | --- | --- | --- | --- | --- | --- | --- |
| 30 | 1.2.3 | **Procesar las medidas recibidas de los sensores** | 41d | 2019-11-20 | 2020-01-22 | 20 |  |  | 1d | 0d |  | 488h |  | 6,664 |  |  |
| 31 | 1.2.3.1 | Planificación | 1d | 2019-11-20 | 2019-11-20 |  |  |  | 18d | 0d | Scrum Master; Técnico; Analista | 24h |  | 328 |  |  |
| 32 | 1.2.3.2 | Diseño del producto | 5d | 2019-11-21 | 2019-11-27 | 31 |  |  | 18d | 0d | Scrum Master; Técnico; Analista | 96h |  | 1,328 |  |  |
| 33 | 1.2.3.3 | Progamación | 13d | 2019-11-28 | 2020-01-06 | 32 |  |  | 10d | 0d | Scrum Master; Técnico; Analista; Programador | 272h |  | 3,688 |  |  |
| 34 | 1.2.3.4 | Integración y prueba | 10d | 2020-01-07 | 2020-01-22 | 33 |  |  | 1d |  | Scrum Master; Técnico; Analista; Programador | 96h |  | 1,320 |  |  |
| 35 | 1.2.4 | **Enlazar la puerta enlace con la aplicación de usuario** | 32d | 2020-04-02 | 2020-05-15 | 51 |  |  | 45d | 0d |  | 512h |  | 7,168 |  |  |
| 36 | 1.2.4.1 | Planificación | 1d | 2020-04-02 | 2020-04-02 |  |  |  | 45d | 0d | Scrum Master; Técnico | 16h |  | 224 |  |  |
| 37 | 1.2.4.2 | Diseño del producto | 5d | 2020-04-03 | 2020-04-09 | 36 |  |  | 45d | 0d | Scrum Master; Técnico | 80h |  | 1,120 |  |  |
| 38 | 1.2.4.3 | Programación | 20d | 2020-04-10 | 2020-05-07 | 37 |  |  | 45d | 0d | Scrum Master; Técnico | 320h |  | 4,480 |  |  |
| 39 | 1.2.4.4 | Integración y prueba | 6d | 2020-05-08 | 2020-05-15 | 38 |  |  | 55d |  | Scrum Master; Técnico | 96h |  | 1,344 |  |  |
| 40 | 1.3 | **Aplicación de clientes** | 289d | 2019-02-04 A | 2020-04-01 |  | 38% | 178.57d | 45d |  |  | 1840h | 736h | 25,168 | 9,936 | Tarea |
| 41 | 1.3.1 | **Creación de la interfaz** | 47d | 2019-02-04 A | 2019-04-09 A |  | 100% |  |  |  |  | 736h | 736h | 9,936 | 9,936 | Estado Inicial |
| 42 | 1.3.1.1 | Planificación | 2d | 2019-02-04 A | 2019-02-05 A |  | 100% |  |  |  | Analista; Programador | 32h | 32h | 432 | 432 |  |
| 43 | 1.3.1.2 | Diseño del producto | 7d | 2019-02-06 A | 2019-02-14 A | 42 | 100% |  |  |  | Analista; Programador | 112h | 112h | 1,512 | 1,512 |  |
| 44 | 1.3.1.3 | Programación | 30d | 2019-02-15 A | 2019-03-28 A | 43 | 100% |  |  |  | Analista; Programador | 464h | 464h | 6,264 | 6,264 |  |
| 45 | 1.3.1.4 | Integración y prueba | 8d | 2019-03-29 A | 2019-04-09 A | 44 | 100% |  |  |  | Analista; Programador | 128h | 128h | 1,728 | 1,728 |  |
| 46 | 1.3.2 | **Enlazar la aplicación con la base de datos** | 28d | 2020-01-23 | 2020-03-02 | 62, 30 |  |  | 1d | 0d |  | 448h |  | 6,048 |  |  |
| 47 | 1.3.2.1 | Planificación | 1d | 2020-01-23 | 2020-01-23 |  |  |  | 1d | 0d | Analista; Programador | 16h |  | 216 |  |  |
| 48 | 1.3.2.2 | Diseño del producto | 4d | 2020-01-24 | 2020-01-29 | 47 |  |  | 1d | 0d | Analista; Programador | 64h |  | 864 |  |  |
| 49 | 1.3.2.3 | Progamación | 18d | 2020-01-30 | 2020-02-24 | 48 |  |  | 1d | 0d | Analista; Programador | 288h |  | 3,888 |  |  |
| 50 | 1.3.2.4 | Integración y prueba | 5d | 2020-02-25 | 2020-03-02 | 49 |  |  | 1d |  | Analista; Programador | 80h |  | 1,080 |  |  |
| 51 | 1.3.3 | **Mostrar los datos recibidos en la interfaz** | 49d | 2020-01-23 | 2020-04-01 | 62, 30 |  |  | 45d | 0d |  | 656h |  | 9,184 |  |  |
| 52 | 1.3.3.1 | Planificación | 2d | 2020-01-23 | 2020-01-24 |  |  |  | 53d | 0d | Scrum Master; Técnico | 32h |  | 448 |  |  |
| 53 | 1.3.3.2 | Diseño del producto | 6d | 2020-01-27 | 2020-02-03 | 52 |  |  | 53d | 0d | Scrum Master; Técnico | 96h |  | 1,344 |  |  |
| 54 | 1.3.3.3 | Programación | 26d | 2020-02-04 | 2020-03-10 | 53 |  |  | 53d | 0d | Scrum Master; Técnico | 416h |  | 5,824 |  |  |
| 55 | 1.3.3.4 | Integración y prueba | 14d | 2020-03-11 | 2020-04-01 | 54 |  |  | 45d |  | Scrum Master; Técnico | 112h |  | 1,568 |  |  |

| ID | WBS | Task | Duration | Start | Finish | Predecessors | Total slack | Free slack | Resources | Work | Cost | Text1 |
| --- | --- | --- | --- | --- | --- | --- | --- | --- | --- | --- | --- | --- |
| 56 | 1.4 | **Base de datos** | 269d | 2019-05-24 | 2020-06-17 |  | 55d |  |  | 1352h | 18,384 | Tarea |
| 57 | 1.4.1 | **Crear la estructura de los datos** | 59d | 2019-05-24 | 2019-08-16 | 3, 41 | 74d | 0d |  | 648h | 8,744 |  |
| 58 | 1.4.1.1 | Planificación | 2d | 2019-05-24 | 2019-05-27 |  | 92d | 0d | Analista; Programador | 24h | 320 |  |
| 59 | 1.4.1.2 | Diseño del producto | 6d | 2019-05-28 | 2019-06-04 | 58 | 92d | 0d | Analista; Programador | 96h | 1,296 |  |
| 60 | 1.4.1.3 | Programación | 26d | 2019-06-05 | 2019-07-10 | 59 | 92d | 0d | Analista; Programador | 416h | 5,616 |  |
| 61 | 1.4.1.4 | Integración y prueba | 12d | 2019-07-11 | 2019-08-16 | 60 | 74d |  | Analista; Programador | 112h | 1,512 |  |
| 62 | 1.4.2 | **Recibir peticiones externas** | 23d | 2019-08-19 | 2019-09-18 | 57 | 74d |  |  | 368h | 4,968 |  |
| 63 | 1.4.2.1 | Planificación | 1d | 2019-08-19 | 2019-08-19 |  | 74d | 0d | Analista; Programador | 16h | 216 |  |
| 64 | 1.4.2.2 | Diseño del producto | 3d | 2019-08-20 | 2019-08-22 | 63 | 74d | 0d | Analista; Programador | 48h | 648 |  |
| 65 | 1.4.2.3 | Programación | 15d | 2019-08-23 | 2019-09-12 | 64 | 74d | 0d | Analista; Programador | 240h | 3,240 |  |
| 66 | 1.4.2.4 | Integración y prueba | 4d | 2019-09-13 | 2019-09-18 | 65 | 84d |  | Analista; Programador | 64h | 864 |  |
| 67 | 1.4.3 | **Gestión de cuentas** | 23d | 2020-05-18 | 2020-06-17 | 35 | 55d |  |  | 336h | 4,672 |  |
| 68 | 1.4.3.1 | Planificación | 1d | 2020-05-18 | 2020-05-18 |  | 55d | 0d | Scrum Master; Técnico | 16h | 224 |  |
| 69 | 1.4.3.2 | Diseño del producto | 3d | 2020-05-19 | 2020-05-21 | 68 | 55d | 0d | Scrum Master; Técnico | 48h | 672 |  |
| 70 | 1.4.3.3 | Programación | 15d | 2020-05-22 | 2020-06-11 | 69 | 55d | 0d | Scrum Master; Técnico | 240h | 3,360 |  |
| 71 | 1.4.3.4 | Integración y prueba | 4d | 2020-06-12 | 2020-06-17 | 70 | 55d |  | Técnico | 32h | 416 |  |
