# GestiónProyecto_Llamathrust_Optimizado

Schedule from MS Project, 2019-02-04 to 2020-09-02, status date 2019-05-11, costs in €, A marks actual dates.

## Calendars

- Estándar: Mon-Fri 09:00-13:00, 15:00-19:00; Sat-Sun off. Exceptions (off unless hours are given): 2019-04-18 (Jueves Santo, recurring), 2019-04-19 (Viernes Santo, recurring), 2019-05-01 (Fiesta del Trabajo, recurring), 2019-05-02 (Fiesta de la Comunidad de Madrid, recurring), 2019-08-06 (Santos Justo y Pastor, recurring), 2019-08-15 (Asunción de la Virgen, recurring), 2019-10-09 (Bautismo de Miguel de Cervantes, recurring), 2019-10-12 (Día de la Hispanidad, recurring), 2019-11-01 (Todos los Santos, recurring), 2019-12-06 (Día de la Constitución, recurring), 2019-12-09 (Inmaculada Concepción, recurring), 2019-12-25 (Navidad, recurring), 2019-12-31 (Víspera de Año Nuevo, recurring), 2020-01-01 (Año Nuevo, recurring), 2020-03-17 (San Patricio, recurring).

## Resources

| Resource | Rate |
| --- | --- |
| Scrum Master | 15 |
| Analista | 13 |
| Programador | 14 |
| Técnico | 13 |

## Schedule

| ID | WBS | Task | Duration | Start | Finish | Predecessors | Complete | Remaining | Baseline start | Baseline finish | Baseline duration | Total slack | Free slack | Constraint | Resources | Work | Actual work | Cost | Baseline cost | Actual cost | Text1 |
| --- | --- | --- | --- | --- | --- | --- | --- | --- | --- | --- | --- | --- | --- | --- | --- | --- | --- | --- | --- | --- | --- |
| 1 | 1 | **Llamathrust** | 399d | 2019-02-04 A | 2020-09-02 |  | 18% | 325.26d | 2019-02-04 | 2020-09-02 | 399d | 0d |  |  |  | 10479h | 1818.4h | 145,136.4 | 142,080 | 25,188.4 |  |
| 2 | 1.1 | **Dispositivos Enchufe** | 399d | 2019-02-04 A | 2020-09-02 |  | 20% | 320.53d | 2019-02-04 | 2020-09-02 | 399d | 0d |  |  |  | 5560h | 1062.4h | 76,840 | 76,840 | 14,816 | Tarea |
| 3 | 1.1.1 | **Tomar datos de los sensores** | 75d | 2019-02-04 A | 2019-05-23 |  | 80% | 15d | 2019-02-04 | 2019-05-23 | 75d | 18d | 0d |  |  | 1536h | 1062.4h | 21,328 | 21,328 | 14,816 | Estado Inicial |
| 4 | 1.1.1.1 | Planificación | 7d | 2019-02-04 A | 2019-02-12 A |  | 100% |  | 2019-02-04 | 2019-02-12 | 7d |  |  |  | Scrum Master; Técnico | 112h | 112h | 1,568 | 1,568 | 1,568 |  |
| 5 | 1.1.1.2 | Diseño del producto | 18d | 2019-02-13 A | 2019-03-08 A | 4 | 100% |  | 2019-02-13 | 2019-03-08 | 18d |  |  |  | Scrum Master; Técnico | 288h | 288h | 4,032 | 4,032 | 4,032 |  |
| 6 | 1.1.1.3 | Programación | 38d | 2019-03-11 A | 2019-05-08 | 5 | 90% | 3.8d | 2019-03-11 | 2019-05-08 | 38d | 6d | 0d |  | Scrum Master; Técnico; Analista; Programador | 784h | 662.4h | 10,888 | 10,888 | 9,216 |  |
| 7 | 1.1.1.4 | Integración y prueba | 11d | 2019-05-09 | 2019-05-23 | 6 |  |  | 2019-05-09 | 2019-05-23 | 11d | 6d |  |  | Scrum Master; Técnico; Analista; Programador | 352h |  | 4,840 | 4,840 |  |  |
| 8 | 1.1.2 | **Conectar los enchufes con la puerta de enlace** | 113d | 2019-05-24 | 2019-11-04 | 3, 40 |  |  | 2019-05-24 | 2019-11-04 | 113d | 18d | 0d |  |  | 1856h |  | 26,076 | 26,076 |  |  |
| 9 | 1.1.2.1 | Planificación | 8d | 2019-05-24 | 2019-06-04 |  |  |  | 2019-05-24 | 2019-06-04 | 8d | 18d | 0d |  | Scrum Master | 64h |  | 960 | 960 |  |  |
| 10 | 1.1.2.2 | Diseño del producto | 21d | 2019-06-05 | 2019-07-03 | 9 |  |  | 2019-06-05 | 2019-07-03 | 21d | 18d | 0d |  | Scrum Master | 168h |  | 2,520 | 2,520 |  |  |
| 11 | 1.1.2.3 | Programación | 71d | 2019-07-04 | 2019-10-15 | 10 |  |  | 2019-07-04 | 2019-10-15 | 71d | 18d | 0d | start no earlier than 2019-07-04 | Scrum Master; Técnico; Analista [25%]; Programador [25%] | 1208h |  | 16,876 | 16,876 |  |  |
| 12 | 1.1.2.4 | Integración y prueba | 13d | 2019-10-16 | 2019-11-04 | 11 |  |  | 2019-10-16 | 2019-11-04 | 13d | 18d |  |  | Scrum Master; Técnico; Analista; Programador | 416h |  | 5,720 | 5,720 |  |  |
| 13 | 1.1.3 | **Gestión de tareas que tomarán los datos periódicamente** | 115d | 2020-03-26 | 2020-09-02 | 24 |  |  | 2020-03-26 | 2020-09-02 | 115d | 0d |  |  |  | 2168h |  | 29,436 | 29,436 |  |  |
| 14 | 1.1.3.1 | Planificación | 8d | 2020-03-26 | 2020-04-06 |  |  |  | 2020-03-26 | 2020-04-06 | 8d | 1d | 0d |  | Analista; Programador | 128h |  | 1,728 | 1,728 |  |  |
| 15 | 1.1.3.2 | Diseño del producto | 22d | 2020-04-07 | 2020-05-06 | 14 |  |  | 2020-04-07 | 2020-05-06 | 22d | 1d |  |  | Analista; Programador | 336h |  | 4,536 | 4,536 |  |  |
| 16 | 1.1.3.3 | Programación | 71d | 2020-05-08 | 2020-08-14 | 15 |  |  | 2020-05-08 | 2020-08-14 | 71d | 0d |  | start no earlier than 2020-05-08 | Analista; Programador; Scrum Master [25%]; Técnico [25%] | 1288h |  | 17,452 | 17,452 |  |  |
| 17 | 1.1.3.4 | Integración y prueba | 13d | 2020-08-17 | 2020-09-02 | 16 |  |  | 2020-08-17 | 2020-09-02 | 13d | 0d |  |  | Analista; Programador; Scrum Master; Técnico | 416h |  | 5,720 | 5,720 |  |  |
| 18 | 1.2 | **Dispositivos de puerta de enlace** | 133d | 2019-11-05 | 2020-05-15 |  |  |  | 2019-11-05 | 2020-05-15 | 133d | 18d |  |  |  | 1576h |  | 21,688 | 21,688 |  | Tarea |
| 19 | 1.2.1 | **Conectar la puerta de enlace con los enchufes** | 11d | 2019-11-05 | 2019-11-19 | 8 |  |  | 2019-11-05 | 2019-11-19 | 11d | 18d | 0d |  |  | 320h |  | 4,400 | 4,400 |  |  |
| 20 | 1.2.1.1 | Planificación | 1d | 2019-11-05 | 2019-11-05 |  |  |  | 2019-11-05 | 2019-11-05 | 1d | 18d | 0d |  | Scrum Master; Técnico | 16h |  | 224 | 224 |  |  |
| 21 | 1.2.1.2 | Diseño del producto | 1d | 2019-11-06 | 2019-11-06 | 20 |  |  | 2019-11-06 | 2019-11-06 | 1d | 18d | 0d |  | Scrum Master; Técnico; Programador; Analista | 32h |  | 440 | 440 |  |  |
| 22 | 1.2.1.3 | Programación | 7d | 2019-11-07 | 2019-11-15 | 21 |  |  | 2019-11-07 | 2019-11-15 | 7d | 18d | 0d |  | Scrum Master; Técnico; Analista; Programador | 224h |  | 3,080 | 3,080 |  |  |
| 23 | 1.2.1.4 | Integración y prueba | 2d | 2019-11-15 | 2019-11-19 | 22 |  |  | 2019-11-15 | 2019-11-19 | 2d | 18d |  |  | Scrum Master; Técnico; Analista; Programador | 48h |  | 656 | 656 |  |  |
| 24 | 1.2.2 | **Conectar la puerta de enlace con la base de datos** | 16d | 2020-03-03 | 2020-03-25 | 45 |  |  | 2020-03-03 | 2020-03-25 | 16d | 1d | 0d |  |  | 256h |  | 3,456 | 3,456 |  |  |
| 25 | 1.2.2.1 | Planificación | 1d | 2020-03-03 | 2020-03-03 |  |  |  | 2020-03-03 | 2020-03-03 | 1d | 1d | 0d |  | Analista; Programador | 16h |  | 216 | 216 |  |  |
| 26 | 1.2.2.2 | Diseño del producto | 2d | 2020-03-04 | 2020-03-05 | 25 |  |  | 2020-03-04 | 2020-03-05 | 2d | 1d | 0d |  | Analista; Programador | 32h |  | 432 | 432 |  |  |
| 27 | 1.2.2.3 | Programación | 10d | 2020-03-06 | 2020-03-20 | 26 |  |  | 2020-03-06 | 2020-03-20 | 10d | 1d | 0d |  | Analista; Programador | 160h |  | 2,160 | 2,160 |  |  |
| 28 | 1.2.2.4 | Integración y prueba | 3d | 2020-03-23 | 2020-03-25 | 27 |  |  | 2020-03-23 | 2020-03-25 | 3d | 1d |  |  | Analista; Programador | 48h |  | 648 | 648 |  |  |

| ID | WBS | Task | Duration | Start | Finish | Predecessors | Complete | Remaining | Baseline start | Baseline finish | Baseline duration | Total slack | Free slack | Resources | Work | Actual work | Cost | Baseline cost | Actual cost | Text1 |
| --- | --- | --- | --- | --- | --- | --- | --- | --- | --- | --- | --- | --- | --- | --- | --- | --- | --- | --- | --- | --- |
| 29 | 1.2.3 | **Procesar las medidas recibidas de los sensores** | 41d | 2019-11-20 | 2020-01-22 | 19 |  |  | 2019-11-20 | 2020-01-22 | 41d | 1d | 0d |  | 488h |  | 6,664 | 6,664 |  |  |
| 30 | 1.2.3.1 | Planificación | 1d | 2019-11-20 | 2019-11-20 |  |  |  | 2019-11-20 | 2019-11-20 | 1d | 18d | 0d | Scrum Master; Técnico; Analista | 24h |  | 328 | 328 |  |  |
| 31 | 1.2.3.2 | Diseño del producto | 5d | 2019-11-21 | 2019-11-27 | 30 |  |  | 2019-11-21 | 2019-11-27 | 5d | 18d | 0d | Scrum Master; Técnico; Analista | 96h |  | 1,328 | 1,328 |  |  |
| 32 | 1.2.3.3 | Progamación | 13d | 2019-11-28 | 2020-01-06 | 31 |  |  | 2019-11-28 | 2020-01-06 | 13d | 10d | 0d | Scrum Master; Técnico; Analista; Programador | 272h |  | 3,688 | 3,688 |  |  |
| 33 | 1.2.3.4 | Integración y prueba | 10d | 2020-01-07 | 2020-01-22 | 32 |  |  | 2020-01-07 | 2020-01-22 | 10d | 1d |  | Scrum Master; Técnico; Analista; Programador | 96h |  | 1,320 | 1,320 |  |  |
| 34 | 1.2.4 | **Enlazar la puerta enlace con la aplicación de usuario** | 32d | 2020-04-02 | 2020-05-15 | 50 |  |  | 2020-04-02 | 2020-05-15 | 32d | 45d | 0d |  | 512h |  | 7,168 | 7,168 |  |  |
| 35 | 1.2.4.1 | Planificación | 1d | 2020-04-02 | 2020-04-02 |  |  |  | 2020-04-02 | 2020-04-02 | 1d | 45d | 0d | Scrum Master; Técnico | 16h |  | 224 | 224 |  |  |
| 36 | 1.2.4.2 | Diseño del producto | 5d | 2020-04-03 | 2020-04-09 | 35 |  |  | 2020-04-03 | 2020-04-09 | 5d | 45d | 0d | Scrum Master; Técnico | 80h |  | 1,120 | 1,120 |  |  |
| 37 | 1.2.4.3 | Programación | 20d | 2020-04-10 | 2020-05-07 | 36 |  |  | 2020-04-10 | 2020-05-07 | 20d | 45d | 0d | Scrum Master; Técnico | 320h |  | 4,480 | 4,480 |  |  |
| 38 | 1.2.4.4 | Integración y prueba | 6d | 2020-05-08 | 2020-05-15 | 37 |  |  | 2020-05-08 | 2020-05-15 | 6d | 55d |  | Scrum Master; Técnico | 96h |  | 1,344 | 1,344 |  |  |
| 39 | 1.3 | **Aplicación de clientes** | 289d | 2019-02-04 A | 2020-04-01 |  | 41% | 169.41d | 2019-02-04 | 2020-04-01 | 289d | 45d |  |  | 1860h | 756h | 25,604.4 | 25,168 | 10,372.4 | Tarea |
| 40 | 1.3.1 | **Creación de la interfaz** | 52.52d | 2019-02-04 A | 2019-04-17 A |  | 100% |  | 2019-02-04 | 2019-04-22 | 54d |  |  |  | 756h | 756h | 10,372.4 | 9,936 | 10,372.4 | Estado Inicial |
| 41 | 1.3.1.1 | Planificación | 2d | 2019-02-04 A | 2019-02-05 A |  | 100% |  | 2019-02-04 | 2019-02-05 | 2d |  |  | Analista; Programador | 32h | 32h | 432 | 432 | 432 |  |
| 42 | 1.3.1.2 | Diseño del producto | 7d | 2019-02-06 A | 2019-02-14 A | 41 | 100% |  | 2019-02-06 | 2019-02-14 | 7d |  |  | Analista; Programador | 112h | 112h | 1,512 | 1,512 | 1,512 |  |
| 43 | 1.3.1.3 | Programación | 38.12d | 2019-02-15 A | 2019-04-10 A | 42 | 100% |  | 2019-02-15 | 2019-04-08 | 37d |  |  | Analista; Programador | 482h | 482h | 6,507 | 6,264 | 6,507 |  |
| 44 | 1.3.1.4 | Integración y prueba | 6.53d | 2019-04-09 A | 2019-04-17 A | 43 | 100% |  | 2019-04-09 | 2019-04-22 | 8d |  |  | Analista; Programador | 130h | 130h | 1,921.4 | 1,728 | 1,921.4 |  |
| 45 | 1.3.2 | **Enlazar la aplicación con la base de datos** | 28d | 2020-01-23 | 2020-03-02 | 61, 29 |  |  | 2020-01-23 | 2020-03-02 | 28d | 1d | 0d |  | 448h |  | 6,048 | 6,048 |  |  |
| 46 | 1.3.2.1 | Planificación | 1d | 2020-01-23 | 2020-01-23 |  |  |  | 2020-01-23 | 2020-01-23 | 1d | 1d | 0d | Analista; Programador | 16h |  | 216 | 216 |  |  |
| 47 | 1.3.2.2 | Diseño del producto | 4d | 2020-01-24 | 2020-01-29 | 46 |  |  | 2020-01-24 | 2020-01-29 | 4d | 1d | 0d | Analista; Programador | 64h |  | 864 | 864 |  |  |
| 48 | 1.3.2.3 | Progamación | 18d | 2020-01-30 | 2020-02-24 | 47 |  |  | 2020-01-30 | 2020-02-24 | 18d | 1d | 0d | Analista; Programador | 288h |  | 3,888 | 3,888 |  |  |
| 49 | 1.3.2.4 | Integración y prueba | 5d | 2020-02-25 | 2020-03-02 | 48 |  |  | 2020-02-25 | 2020-03-02 | 5d | 1d |  | Analista; Programador | 80h |  | 1,080 | 1,080 |  |  |
| 50 | 1.3.3 | **Mostrar los datos recibidos en la interfaz** | 49d | 2020-01-23 | 2020-04-01 | 61, 29 |  |  | 2020-01-23 | 2020-04-01 | 49d | 45d | 0d |  | 656h |  | 9,184 | 9,184 |  |  |
| 51 | 1.3.3.1 | Planificación | 2d | 2020-01-23 | 2020-01-24 |  |  |  | 2020-01-23 | 2020-01-24 | 2d | 53d | 0d | Scrum Master; Técnico | 32h |  | 448 | 448 |  |  |
| 52 | 1.3.3.2 | Diseño del producto | 6d | 2020-01-27 | 2020-02-03 | 51 |  |  | 2020-01-27 | 2020-02-03 | 6d | 53d | 0d | Scrum Master; Técnico | 96h |  | 1,344 | 1,344 |  |  |
| 53 | 1.3.3.3 | Programación | 26d | 2020-02-04 | 2020-03-10 | 52 |  |  | 2020-02-04 | 2020-03-10 | 26d | 53d | 0d | Scrum Master; Técnico | 416h |  | 5,824 | 5,824 |  |  |
| 54 | 1.3.3.4 | Integración y prueba | 14d | 2020-03-11 | 2020-04-01 | 53 |  |  | 2020-03-11 | 2020-04-01 | 14d | 45d |  | Scrum Master; Técnico | 112h |  | 1,568 | 1,568 |  |  |

| ID | WBS | Task | Type | Duration | Start | Finish | Predecessors | Complete | Remaining | Baseline start | Baseline finish | Baseline duration | Total slack | Free slack | Constraint | Resources | Work | Cost | Baseline cost | Text1 |
| --- | --- | --- | --- | --- | --- | --- | --- | --- | --- | --- | --- | --- | --- | --- | --- | --- | --- | --- | --- | --- |
| 55 | 1.4 | **Base de datos** |  | 269d | 2019-05-24 | 2020-06-17 |  |  |  | 2019-05-24 | 2020-06-17 | 269d | 55d |  |  |  | 1352h | 18,384 | 18,384 | Tarea |
| 56 | 1.4.1 | **Crear la estructura de los datos** |  | 59d | 2019-05-24 | 2019-08-16 | 3, 40 |  |  | 2019-05-24 | 2019-08-16 | 59d | 74d | 0d |  |  | 648h | 8,744 | 8,744 |  |
| 57 | 1.4.1.1 | Planificación |  | 2d | 2019-05-24 | 2019-05-27 |  |  |  | 2019-05-24 | 2019-05-27 | 2d | 92d | 0d |  | Analista; Programador | 24h | 320 | 320 |  |
| 58 | 1.4.1.2 | Diseño del producto |  | 6d | 2019-05-28 | 2019-06-04 | 57 |  |  | 2019-05-28 | 2019-06-04 | 6d | 92d | 0d |  | Analista; Programador | 96h | 1,296 | 1,296 |  |
| 59 | 1.4.1.3 | Programación |  | 26d | 2019-06-05 | 2019-07-10 | 58 |  |  | 2019-06-05 | 2019-07-10 | 26d | 92d | 0d |  | Analista; Programador | 416h | 5,616 | 5,616 |  |
| 60 | 1.4.1.4 | Integración y prueba |  | 12d | 2019-07-11 | 2019-08-16 | 59 |  |  | 2019-07-11 | 2019-08-16 | 12d | 74d |  |  | Analista; Programador | 112h | 1,512 | 1,512 |  |
| 61 | 1.4.2 | **Recibir peticiones externas** |  | 23d | 2019-08-19 | 2019-09-18 | 56 |  |  | 2019-08-19 | 2019-09-18 | 23d | 74d |  |  |  | 368h | 4,968 | 4,968 |  |
| 62 | 1.4.2.1 | Planificación |  | 1d | 2019-08-19 | 2019-08-19 |  |  |  | 2019-08-19 | 2019-08-19 | 1d | 74d | 0d |  | Analista; Programador | 16h | 216 | 216 |  |
| 63 | 1.4.2.2 | Diseño del producto |  | 3d | 2019-08-20 | 2019-08-22 | 62 |  |  | 2019-08-20 | 2019-08-22 | 3d | 74d | 0d |  | Analista; Programador | 48h | 648 | 648 |  |
| 64 | 1.4.2.3 | Programación |  | 15d | 2019-08-23 | 2019-09-12 | 63 |  |  | 2019-08-23 | 2019-09-12 | 15d | 74d | 0d |  | Analista; Programador | 240h | 3,240 | 3,240 |  |
| 65 | 1.4.2.4 | Integración y prueba |  | 4d | 2019-09-13 | 2019-09-18 | 64 |  |  | 2019-09-13 | 2019-09-18 | 4d | 84d |  |  | Analista; Programador | 64h | 864 | 864 |  |
| 66 | 1.4.3 | **Gestión de cuentas** |  | 23d | 2020-05-18 | 2020-06-17 | 34 |  |  | 2020-05-18 | 2020-06-17 | 23d | 55d |  |  |  | 336h | 4,672 | 4,672 |  |
| 67 | 1.4.3.1 | Planificación |  | 1d | 2020-05-18 | 2020-05-18 |  |  |  | 2020-05-18 | 2020-05-18 | 1d | 55d | 0d |  | Scrum Master; Técnico | 16h | 224 | 224 |  |
| 68 | 1.4.3.2 | Diseño del producto |  | 3d | 2020-05-19 | 2020-05-21 | 67 |  |  | 2020-05-19 | 2020-05-21 | 3d | 55d | 0d |  | Scrum Master; Técnico | 48h | 672 | 672 |  |
| 69 | 1.4.3.3 | Programación |  | 15d | 2020-05-22 | 2020-06-11 | 68 |  |  | 2020-05-22 | 2020-06-11 | 15d | 55d | 0d |  | Scrum Master; Técnico | 240h | 3,360 | 3,360 |  |
| 70 | 1.4.3.4 | Integración y prueba |  | 4d | 2020-06-12 | 2020-06-17 | 69 |  |  | 2020-06-12 | 2020-06-17 | 4d | 55d |  |  | Técnico | 32h | 416 | 416 |  |
| 71 | 1.5 | **Reunión** |  | 396d | 2019-02-05 A | 2020-09-01 |  |  | 396d |  |  |  | 2d |  |  |  | 131h | 2,620 |  |  |
| 72 | 1.5.1 | Reunión 1 | milestone | 0h | 2019-02-05 A | 2019-02-05 A |  | 100% |  |  |  |  |  |  | start no earlier than 2019-02-05 | Analista; Programador; Scrum Master; Técnico |  |  |  |  |
| 73 | 1.5.2 | Reunión 2 | milestone | 0h | 2019-02-19 A | 2019-02-19 A |  | 100% |  |  |  |  |  |  | start no earlier than 2019-02-19 | Analista; Programador; Scrum Master; Técnico |  |  |  |  |
| 74 | 1.5.3 | Reunión 3 | milestone | 0h | 2019-03-05 A | 2019-03-05 A |  | 100% |  |  |  |  |  |  | start no earlier than 2019-03-05 | Analista; Scrum Master; Técnico |  |  |  |  |
| 75 | 1.5.4 | Reunión 4 | milestone | 0h | 2019-03-19 A | 2019-03-19 A |  | 100% |  |  |  |  |  |  | start no earlier than 2019-03-19 | Analista; Programador; Scrum Master; Técnico |  |  |  |  |
| 76 | 1.5.5 | Reunión 5 | milestone | 0h | 2019-04-02 A | 2019-04-02 A |  | 100% |  |  |  |  |  |  | start no earlier than 2019-04-02 | Analista; Programador; Scrum Master; Técnico |  |  |  |  |
| 77 | 1.5.6 | Reunión 6 | milestone | 0h | 2019-04-16 A | 2019-04-16 A |  | 100% |  |  |  |  |  |  | start no earlier than 2019-04-16 | Analista; Programador; Scrum Master; Técnico |  |  |  |  |
| 78 | 1.5.7 | Reunión 7 | milestone | 0h | 2019-04-30 A | 2019-04-30 A |  | 100% |  |  |  |  |  |  | start no earlier than 2019-04-30 | Analista; Programador; Scrum Master; Técnico |  |  |  |  |
| 79 | 1.5.8 | Reunión 8 | milestone | 0h | 2019-05-14 | 2019-05-14 |  |  |  |  |  |  | 332d |  | start no earlier than 2019-05-14 | Analista; Programador; Scrum Master; Técnico | 4h | 80 |  |  |
| 80 | 1.5.9 | Reunión 9 | milestone | 0h | 2019-05-28 | 2019-05-28 |  |  |  |  |  |  | 322d |  | start no earlier than 2019-05-28 | Analista; Programador; Scrum Master; Técnico | 4h | 80 |  |  |
| 81 | 1.5.10 | Reunión 10 | milestone | 0h | 2019-06-11 | 2019-06-11 |  |  |  |  |  |  | 312d |  | start no earlier than 2019-06-11 | Analista; Programador; Scrum Master | 3h | 60 |  |  |
| 82 | 1.5.11 | Reunión 11 | milestone | 0h | 2019-06-25 | 2019-06-25 |  |  |  |  |  |  | 302d |  | start no earlier than 2019-06-25 | Analista; Programador; Scrum Master | 3h | 60 |  |  |
| 83 | 1.5.12 | Reunión 12 | milestone | 0h | 2019-07-09 | 2019-07-09 |  |  |  |  |  |  | 292d |  | start no earlier than 2019-07-09 | Analista; Programador; Scrum Master; Técnico | 4h | 80 |  |  |
| 84 | 1.5.13 | Reunión 13 | milestone | 0h | 2019-07-23 | 2019-07-23 |  |  |  |  |  |  | 282d |  | start no earlier than 2019-07-23 | Analista; Programador; Scrum Master; Técnico | 4h | 80 |  |  |
| 85 | 1.5.14 | Reunión 14 | milestone | 0h | 2019-08-06 | 2019-08-06 |  |  |  |  |  |  | 272d |  | start no earlier than 2019-08-06 | Analista; Scrum Master; Técnico | 3h | 60 |  |  |
| 86 | 1.5.15 | Reunión 15 | milestone | 0h | 2019-08-20 | 2019-08-20 |  |  |  |  |  |  | 264d |  | start no earlier than 2019-08-20 | Analista; Programador; Scrum Master; Técnico | 4h | 80 |  |  |
| 87 | 1.5.16 | Reunión 16 | milestone | 0h | 2019-09-03 | 2019-09-03 |  |  |  |  |  |  | 254d |  | start no earlier than 2019-09-03 | Analista; Programador; Scrum Master; Técnico | 4h | 80 |  |  |
| 88 | 1.5.17 | Reunión 17 | milestone | 0h | 2019-09-17 | 2019-09-17 |  |  |  |  |  |  | 244d |  | start no earlier than 2019-09-17 | Analista; Programador; Scrum Master; Técnico | 4h | 80 |  |  |
| 89 | 1.5.18 | Reunión 18 | milestone | 0h | 2019-10-01 | 2019-10-01 |  |  |  |  |  |  | 234d |  | start no earlier than 2019-10-01 | Analista; Programador; Scrum Master; Técnico | 4h | 80 |  |  |
| 90 | 1.5.19 | Reunión 19 | milestone | 0h | 2019-10-15 | 2019-10-15 |  |  |  |  |  |  | 225d |  | start no earlier than 2019-10-15 | Analista; Programador; Scrum Master; Técnico | 4h | 80 |  |  |
| 91 | 1.5.20 | Reunión 20 | milestone | 0h | 2019-10-29 | 2019-10-29 |  |  |  |  |  |  | 215d |  | start no earlier than 2019-10-29 | Analista; Programador; Scrum Master; Técnico | 4h | 80 |  |  |
| 92 | 1.5.21 | Reunión 21 | milestone | 0h | 2019-11-12 | 2019-11-12 |  |  |  |  |  |  | 206d |  | start no earlier than 2019-11-12 | Analista; Programador; Scrum Master; Técnico | 4h | 80 |  |  |
| 93 | 1.5.22 | Reunión 22 | milestone | 0h | 2019-11-26 | 2019-11-26 |  |  |  |  |  |  | 196d |  | start no earlier than 2019-11-26 | Analista; Programador; Scrum Master; Técnico | 4h | 80 |  |  |
| 94 | 1.5.23 | Reunión 23 | milestone | 0h | 2019-12-10 | 2019-12-10 |  |  |  |  |  |  | 188d |  | start no earlier than 2019-12-10 | Analista; Programador; Scrum Master; Técnico | 4h | 80 |  |  |
| 95 | 1.5.24 | Reunión 24 | milestone | 0h | 2019-12-24 | 2019-12-24 |  |  |  |  |  |  | 178d |  | start no earlier than 2019-12-24 | Analista; Scrum Master | 2h | 40 |  |  |
| 96 | 1.5.25 | Reunión 25 | milestone | 0h | 2020-01-07 | 2020-01-07 |  |  |  |  |  |  | 171d |  | start no earlier than 2020-01-07 | Programador; Técnico | 2h | 40 |  |  |
| 97 | 1.5.26 | Reunión 26 | milestone | 0h | 2020-01-21 | 2020-01-21 |  |  |  |  |  |  | 161d |  | start no earlier than 2020-01-21 | Analista; Programador; Scrum Master; Técnico | 4h | 80 |  |  |
| 98 | 1.5.27 | Reunión 27 | milestone | 0h | 2020-02-04 | 2020-02-04 |  |  |  |  |  |  | 151d |  | start no earlier than 2020-02-04 | Analista; Programador; Scrum Master; Técnico | 4h | 80 |  |  |
| 99 | 1.5.28 | Reunión 28 | milestone | 0h | 2020-02-18 | 2020-02-18 |  |  |  |  |  |  | 141d |  | start no earlier than 2020-02-18 | Analista; Programador; Scrum Master; Técnico | 4h | 80 |  |  |
| 100 | 1.5.29 | Reunión 29 | milestone | 0h | 2020-03-03 | 2020-03-03 |  |  |  |  |  |  | 131d |  | start no earlier than 2020-03-03 | Analista; Programador; Scrum Master; Técnico | 4h | 80 |  |  |
| 101 | 1.5.30 | Reunión 30 | milestone | 0h | 2020-03-17 | 2020-03-17 |  |  |  |  |  |  | 121d |  | start no earlier than 2020-03-17 | Analista; Programador; Técnico | 3h | 60 |  |  |
| 102 | 1.5.31 | Reunión 31 | milestone | 0h | 2020-03-31 | 2020-03-31 |  |  |  |  |  |  | 112d |  | start no earlier than 2020-03-31 | Analista; Programador; Scrum Master; Técnico | 4h | 80 |  |  |
| 103 | 1.5.32 | Reunión 32 | milestone | 0h | 2020-04-14 | 2020-04-14 |  |  |  |  |  |  | 102d |  | start no earlier than 2020-04-14 | Analista; Programador; Scrum Master; Técnico | 4h | 80 |  |  |
| 104 | 1.5.33 | Reunión 33 | milestone | 0h | 2020-04-28 | 2020-04-28 |  |  |  |  |  |  | 92d |  | start no earlier than 2020-04-28 | Analista; Programador; Scrum Master; Técnico | 4h | 80 |  |  |
| 105 | 1.5.34 | Reunión 34 | milestone | 0h | 2020-05-12 | 2020-05-12 |  |  |  |  |  |  | 82d |  | start no earlier than 2020-05-12 | Analista; Programador; Scrum Master; Técnico | 4h | 80 |  |  |
| 106 | 1.5.35 | Reunión 35 | milestone | 0h | 2020-05-26 | 2020-05-26 |  |  |  |  |  |  | 72d |  | start no earlier than 2020-05-26 | Analista; Programador; Scrum Master; Técnico | 4h | 80 |  |  |
| 107 | 1.5.36 | Reunión 36 | milestone | 0h | 2020-06-09 | 2020-06-09 |  |  |  |  |  |  | 62d |  | start no earlier than 2020-06-09 | Analista; Programador; Scrum Master; Técnico | 4h | 80 |  |  |
| 108 | 1.5.37 | Reunión 37 | milestone | 0h | 2020-06-23 | 2020-06-23 |  |  |  |  |  |  | 52d |  | start no earlier than 2020-06-23 | Analista; Programador; Técnico | 3h | 60 |  |  |
| 109 | 1.5.38 | Reunión 38 | milestone | 0h | 2020-07-07 | 2020-07-07 |  |  |  |  |  |  | 42d |  | start no earlier than 2020-07-07 | Analista; Programador; Scrum Master; Técnico | 4h | 80 |  |  |
| 110 | 1.5.39 | Reunión 39 | milestone | 0h | 2020-07-21 | 2020-07-21 |  |  |  |  |  |  | 32d |  | start no earlier than 2020-07-21 | Analista; Programador; Scrum Master; Técnico | 4h | 80 |  |  |
| 111 | 1.5.40 | Reunión 40 | milestone | 0h | 2020-08-04 | 2020-08-04 |  |  |  |  |  |  | 22d |  | start no earlier than 2020-08-04 | Analista; Programador; Scrum Master; Técnico | 4h | 80 |  |  |
| 112 | 1.5.41 | Reunión 41 | milestone | 0h | 2020-08-18 | 2020-08-18 |  |  |  |  |  |  | 12d |  | start no earlier than 2020-08-18 | Analista; Programador; Scrum Master; Técnico | 4h | 80 |  |  |
| 113 | 1.5.42 | Reunión 42 | milestone | 0h | 2020-09-01 | 2020-09-01 |  |  |  |  |  |  | 2d |  | start no earlier than 2020-09-01 | Analista; Programador; Scrum Master; Técnico | 4h | 80 |  |  |
